# Project Management for H2020 BC1 (DFS)

Schedule from MS Project, 2019-09-06 to 2020-06-19, status date 2020-01-30, A marks actual dates.
ASG Software Solutions
The Project Management template plan provides a work breakdown structure that can be used to plan and schedule the effort of the Project Management activities. / The template was built using all the stages, activities and tasks from the Project Management methodology.

## Calendars

- H2020 BC1 (DFS): Mon-Fri 08:00-12:00, 13:00-17:00; Sat-Sun off. Exceptions (off unless hours are given): 2019-12-24 to 2019-12-25 (December 24 & 25), 2020-01-01 (Jan 1), 2020-01-20 (Jan 20), 2020-02-17 (Feb 17), 2020-04-10 (Apr 10).
- Board Meetings: Mon-Wed off; Thu 08:00-12:00, 13:00-17:00; Fri-Sun off. Exceptions (off unless hours are given): 2020-01-02 to 2020-01-30 (Exception), 2020-02-13 (Exception 12), 2020-02-27 (Exception 11), 2020-03-12 (Exception3), 2020-03-26 (Exception4), 2020-04-09 (Exception5), 2020-04-23 (Exception6), 2020-05-07 (Exception7), 2020-05-21 (Exception8), 2020-06-04 (Exception9), 2020-06-18 (Exception10).

## Resources

| Resource | Notes |
| --- | --- |
| Project Director | Responsible for management of the project at a strategic level. |
| Project Manager | Responsible for the delivery of a quality project on-schedule, within budget, with a satisfied Acceptor and a motivated project team. |
| Acceptor | Key individual within the business organization who is the principal interface with the project team and who has the authority to accept all deliverables and resolve all project issues (sometimes referred to as the Project Sponsor). |
| Application Architect | Defines the major application systems needed to support the enterprise. During systems development, the Application Architect defines the application solution. |
| Technical Architect | Defines the technologies and standards required to support the application and information architectures. During systems development, the Technical Architect defines the technical solution. |
| Quality Assurance Manager | Responsible for providing confidence to management that the Quality System is being applied. |
| Contracts Manager | Responsible for managing the contractual interfaces with the customer and with subcontractors. |
| Jennifer |  |
| Kristina |  |
| Robbie |  |
| Bob Cox |  |
| Johan |  |
| Hatch |  |
| Colby |  |
| MLM |  |
| Team |  |
| Tronox |  |
| Lee |  |
| Matt |  |

## Schedule

| ID | WBS | Task | Type | Duration | Start | Finish | Predecessors | Complete | Remaining | Baseline start | Baseline finish | Baseline duration | Baseline 1 start | Baseline 1 finish | Total slack | Free slack | Constraint | Calendar | Resources | Work | Actual work | Original Duration |
| --- | --- | --- | --- | --- | --- | --- | --- | --- | --- | --- | --- | --- | --- | --- | --- | --- | --- | --- | --- | --- | --- | --- |
| 1 | 1 | **Milestones** |  | 134d | 2019-09-06 | 2020-03-19 |  |  |  | 2019-09-06 | 2020-03-05 | 124d | 2019-09-06 | 2020-06-04 | 66d |  |  |  |  |  |  | 189 days |
| 2 | 1.1 | Gate 2 Approval | milestone | 0d | 2019-09-06 | 2019-09-06 |  |  |  | 2019-09-06 | 2019-09-06 | 0d | 2019-09-06 | 2019-10-04 | 200d |  | start no earlier than 2019-09-06 |  |  |  |  | 21 days |
| 3 | 1.2 | STEERCOM notification for Gate 3 submission | milestone | 0d | 2020-02-11 | 2020-02-11 | 77 |  |  | 2020-02-18 | 2020-02-18 | 0d | 2020-05-07 | 2020-05-07 | 91d |  |  |  |  |  |  | 0 days |
| 4 | 1.3 | Gate 3 approval (Local) | milestone | 0d | 2020-03-05 | 2020-03-05 | 82SS |  |  | 2020-02-20 | 2020-02-20 | 0d | 2020-05-20 | 2020-05-20 | 8d |  |  | Board Meetings |  |  |  | 0 days |
| 5 | 1.4 | Gate 3 approval (Global) | milestone | 0d | 2020-03-19 | 2020-03-19 | 85SS |  |  | 2020-03-05 | 2020-03-05 | 0d | 2020-06-04 | 2020-06-04 | 7d |  |  | Board Meetings |  |  |  | 0 days |
| 6 | 2 | **Engineering** |  | 43d | 2019-11-21 A | 2020-01-24 |  | 35% | 27.95d | 2019-11-21 | 2020-01-24 | 43d | 2019-11-13 | 2020-01-31 | 14d |  |  |  |  | 1512h | 504h | 54 days |
| 7 | 2.1 | **Engineering Reviews** |  | 41d | 2019-11-25 A | 2020-01-24 |  | 39% | 25d | 2019-11-25 | 2020-01-24 | 41d | 2019-11-25 | 2020-01-24 | 14d |  |  |  |  | 328h | 128h | 41 days |
| 8 | 2.1.1 | Engineering Reviews |  | 41d | 2019-11-25 A | 2020-01-24 |  | 39% | 25d | 2019-11-25 | 2020-01-24 | 41d | 2019-11-25 | 2020-01-24 | 14d | 12d | start no earlier than 2019-11-25 |  | Colby | 328h | 128h | 41 days |
| 9 | 2.2 | **Engineering - Process** |  | 36d | 2019-11-21 A | 2020-01-14 |  | 31% | 24.98d | 2019-11-21 | 2020-01-14 | 36d | 2019-11-21 | 2020-01-14 | 21d |  |  |  |  | 784h | 240h | 36 days |
| 10 | 2.2.1 | Update P&ID's |  | 31d | 2019-11-26 A | 2020-01-10 |  | 48% | 16d | 2019-11-26 | 2020-01-10 | 31d | 2019-11-26 | 2020-01-10 | 23d | 21d | finish no earlier than 2020-01-10 |  | Hatch | 248h | 120h | 31 days |
| 11 | 2.2.2 | Set-up functional locations |  | 31d | 2019-11-26 A | 2020-01-10 |  | 48% | 16d | 2019-11-26 | 2020-01-10 | 31d | 2019-11-26 | 2020-01-10 | 23d | 21d | finish no earlier than 2020-01-10 |  | Hatch | 248h | 120h | 31 days |
| 12 | 2.2.3 | Setup Functional Locations |  | 36d | 2019-11-21 | 2020-01-14 |  |  |  | 2019-11-21 | 2020-01-14 | 36d | 2019-11-21 | 2020-01-14 | 21d | 19d | finish no earlier than 2020-01-14 |  | Hatch; Lee | 288h |  | 36 days |
| 13 | 2.3 | **Engineering - Instrumentation** |  | 31d | 2019-12-02 A | 2020-01-16 |  | 41% | 18.15d | 2019-12-02 | 2020-01-16 | 31d | 2019-11-18 | 2019-12-19 | 19d |  |  |  |  | 400h | 136h | 24 days |
| 14 | 2.3.1 | Instrument List (Area 1) & cost from Engineering |  | 11d | 2019-12-02 A | 2019-12-16 A |  | 100% |  | 2019-12-02 | 2019-12-20 | 15d | 2019-11-18 | 2019-12-06 |  |  | start no earlier than 2019-12-02 |  | Robbie | 88h | 88h | 15 days |
| 15 | 2.3.2 | Instrument list (Area 2) & cost from Engineering |  | 6d | 2019-12-09 A | 2019-12-16 A |  | 100% |  | 2019-12-09 | 2019-12-20 | 10d | 2019-12-06 | 2019-12-19 |  |  | start no earlier than 2019-12-09 |  | Robbie | 48h | 48h | 10 days |
| 16 | 2.3.3 | Instrument Data sheets / Specifications |  | 9d | 2019-12-04 | 2019-12-16 |  |  |  | 2019-12-04 | 2019-12-17 | 10d | 2019-12-06 | 2019-12-19 | 39d | 37d | start no earlier than 2019-12-04 |  | Robbie; Matt | 144h |  | 10 days |
| 17 | 2.3.4 | Loop Sheets |  | 15d | 2019-12-26 | 2020-01-16 |  |  |  | 2019-12-26 | 2020-01-16 | 15d | 2019-11-27 | 2019-12-17 | 19d | 17d | start no earlier than 2019-12-26 |  | Bob Cox | 120h |  | 15 days |
| 18 | 3 | **Project Management** |  | 133d | 2019-12-10 A | 2020-06-19 |  | 4% | 127.32d | 2019-12-10 | 2020-06-05 | 123d | 2019-11-28 | 2020-06-25 | 0d |  |  |  |  | 864h | 40h | 145 days |
| 19 | 3.1 | PMP (Project Management Plan) |  | 20d | 2019-12-16 | 2020-01-15 |  |  |  | 2019-12-16 | 2020-01-15 | 20d | 2020-02-03 | 2020-02-19 | 10d | 0d | start no earlier than 2019-12-16 |  | Colby | 160h |  | 13 days |
| 20 | 3.2 | AFE with Supporting documents |  | 3d | 2020-01-16 | 2020-01-21 | 19 |  |  | 2020-01-16 | 2020-01-21 | 3d | 2020-04-29 | 2020-05-01 | 17d | 15d |  |  | Colby | 24h |  | 3 days |
| 21 | 3.3 | Internal Document Review |  | 4d | 2020-02-12 | 2020-02-18 | 20, 31, 19, 42, 8, 10, 11, 12, 16, 17, 25 |  |  | 2020-01-31 | 2020-02-06 | 5d | 2020-05-04 | 2020-05-06 | 2d | 0d |  |  | Colby | 40h |  | 3 days |
| 22 | 3.4 | **Scheduling / Gate Prep** |  | 34d | 2019-12-10 A | 2020-01-30 |  | 20% | 27.2d | 2019-12-10 | 2020-01-30 | 34d | 2020-02-11 | 2020-03-04 | 10d |  |  |  |  | 120h | 40h | 16 days |
| 23 | 3.4.1 | DFS Scheduling |  | 5d | 2019-12-10 A | 2019-12-16 A |  | 100% |  | 2019-12-10 | 2019-12-16 | 5d | 2020-02-11 | 2020-02-17 |  |  | start no earlier than 2019-12-10 |  | Colby | 40h | 40h | 5 days |
| 24 | 3.4.2 | Develop execution schedule |  | 10d | 2019-12-17 | 2020-01-02 | 23 |  |  | 2019-12-17 | 2020-01-02 | 10d |  |  | 19d | 9d |  |  |  |  |  |  |
| 25 | 3.4.3 | P6 Schedule Implementation |  | 10d | 2020-01-16 | 2020-01-30 | 19, 24 |  |  | 2020-01-16 | 2020-01-30 | 10d | 2020-02-20 | 2020-03-04 | 10d | 8d |  |  | Colby; Johan | 80h |  | 10 days |

| ID | WBS | Task | Duration | Start | Finish | Predecessors | Complete | Remaining | Baseline start | Baseline finish | Baseline duration | Baseline 1 start | Baseline 1 finish | Total slack | Free slack | Constraint | Resources | Work | Actual work | Original Duration |
| --- | --- | --- | --- | --- | --- | --- | --- | --- | --- | --- | --- | --- | --- | --- | --- | --- | --- | --- | --- | --- |
| 26 | 3.5 | **DFS Close OUT** | 65d | 2020-03-20 | 2020-06-19 |  |  |  | 2020-03-06 | 2020-06-05 | 65d | 2020-06-05 | 2020-06-25 | 0d |  |  |  | 520h |  | 15 days |
| 27 | 3.5.1 | DFS Report | 3mo | 2020-03-20 | 2020-06-12 | 85 |  |  | 2020-03-06 | 2020-05-29 | 3mo | 2020-06-05 | 2020-06-11 | 0d |  | start no earlier than 2020-02-10 | Colby | 480h |  | 5 days |
| 28 | 3.5.2 | Financial Close OUT | 1w | 2020-06-15 | 2020-06-19 | 27 |  |  | 2020-06-01 | 2020-06-05 | 1w | 2020-06-12 | 2020-06-25 | 0d |  | start no earlier than 2020-02-10 | Colby; Johan | 40h |  | 10 days |
| 29 | 4 | **Cost Estimating** | 50d | 2019-11-28 | 2020-02-11 |  |  |  | 2019-11-28 | 2020-01-22 | 36d | 2019-11-28 | 2020-04-21 | 2d |  |  |  | 192h |  | 98 days |
| 30 | 4.1 | WBS (Work Breakdown Structure) ~ 270 | 24d | 2019-11-28 | 2020-01-03 |  |  |  | 2019-11-28 | 2020-01-03 | 24d | 2019-11-28 | 2020-01-03 | 24d | 22d | finish no earlier than 2020-01-03 | Colby; Johan | 192h |  | 24 days |
| 31 | 4.2 | Prepare capital estimate | 4d | 2020-02-06 | 2020-02-11 | 67, 62, 56, 14, 15, 30, 70 |  |  | 2020-01-10 | 2020-01-22 | 8d |  |  | 2d | 0d |  |  |  |  |  |
| 32 | 5 | **SHEQ** | 53d | 2019-11-13 A | 2020-01-30 |  | 53% | 25.14d | 2019-11-13 | 2020-01-30 | 53d | 2019-11-13 | 2020-01-28 | 99d |  |  |  | 700h | 368h | 51 days |
| 33 | 5.1 | SCP approval | 16d | 2019-11-29 A | 2019-12-20 |  | 75% | 4d | 2019-11-29 | 2019-12-20 | 16d | 2019-11-15 | 2019-12-06 | 124d |  | finish no earlier than 2019-12-20 | Jennifer | 128h | 96h | 16 days |
| 34 | 5.2 | DCA approval | 14d | 2019-12-03 A | 2019-12-20 |  | 71% | 4d | 2019-12-03 | 2019-12-20 | 14d | 2019-11-19 | 2019-12-06 | 124d |  | start no earlier than 2019-12-03 | Jennifer | 112h | 80h | 14 days |
| 35 | 5.3 | **PHA approvals** | 3d | 2019-12-18 | 2019-12-20 |  |  |  | 2019-12-18 | 2019-12-20 | 3d | 2019-12-09 | 2019-12-11 | 124d |  |  |  | 36h |  | 2.5 days |
| 36 | 5.3.1 | Vent for AlCl3 System | 2.5d | 2019-12-18 | 2019-12-20 |  |  |  | 2019-12-18 | 2019-12-20 | 2.5d | 2019-12-09 | 2019-12-11 | 124.5d |  | start no earlier than 2019-12-18 | Kristina; Jennifer | 20h |  | 2.5 days |
| 37 | 5.3.2 | Garo/Acid Pump & Fill | 2d | 2019-12-19 | 2019-12-20 |  |  |  | 2019-12-19 | 2019-12-20 | 2d | 2019-12-09 | 2019-12-10 | 124d |  | start no earlier than 2019-12-19 | Kristina; Jennifer | 16h |  | 2 days |
| 38 | 5.4 | **Risk Assessment** | 53d | 2019-11-13 A | 2020-01-30 |  | 45% | 29d | 2019-11-13 | 2020-01-30 | 53d | 2019-11-13 | 2020-01-28 | 10d |  |  |  | 424h | 192h | 51 days |
| 39 | 5.4.1 | Idea Creation of Risk - Meeting #1 | 5d | 2019-11-13 A | 2019-11-19 A |  | 100% |  | 2019-11-13 | 2019-11-19 | 5d | 2019-11-13 | 2019-11-19 |  |  | start no earlier than 2019-11-13 | Team | 40h | 40h | 5 days |
| 40 | 5.4.2 | Meeting #2 Risk Ranking & Assessment | 12d | 2019-11-20 A | 2019-12-05 A | 39 | 100% |  | 2019-11-20 | 2019-12-05 | 12d | 2019-11-19 | 2019-12-04 |  |  |  | Colby | 96h | 96h | 12 days |
| 41 | 5.4.3 | Meeting #3 Risk Ranking & Assessment | 20d | 2019-12-06 A | 2020-01-07 | 40 | 35% | 13d | 2019-12-06 | 2020-01-07 | 20d | 2019-11-29 | 2020-01-07 | 10d | 0d |  | Colby | 160h | 56h | 25 days |
| 42 | 5.4.4 | Meeting #4 Risk Ranking & Assessment | 16d | 2020-01-08 | 2020-01-30 | 41 |  |  | 2020-01-08 | 2020-01-30 | 16d | 2020-01-06 | 2020-01-28 | 10d | 8d |  | Colby | 128h |  | 16 days |
| 43 | 6 | **Procurement** | 73d | 2019-11-01 A | 2020-02-18 |  | 79% | 15.47d | 2019-11-01 | 2020-01-30 | 61d | 2019-11-21 | 2020-04-29 | 87d |  |  |  | 1320h | 1064h | 109 days |
| 44 | 6.1 | Procurement Strategy | 8d | 2019-12-09 A | 2019-12-18 |  | 75% | 2d | 2019-12-09 | 2019-12-13 | 5d | 2019-11-21 | 2019-11-27 | 27d | 6d | start no earlier than 2019-12-09 |  |  |  | 5 days |
| 45 | 6.2 | POP (Procurement Operating Plan) | 28d | 2019-12-31 A | 2020-02-10 | 44, 55, 61, 66 | 75% | 7d | 2019-12-31 | 2020-01-22 | 15d | 2020-03-25 | 2020-04-15 | 20d | 0d | finish no earlier than 2020-02-10 | Johan | 224h | 168h | 15 days |
| 46 | 6.3 | **ProCom** | 5d | 2020-02-11 | 2020-02-18 |  |  |  | 2020-01-23 | 2020-01-30 | 6d | 2019-11-21 | 2020-04-29 | 20d |  |  |  | 48h |  | 109 days |
| 47 | 6.3.1 | **Procom 1** | 5d | 2020-02-11 | 2020-02-18 |  |  |  | 2020-01-23 | 2020-01-30 | 6d | 2020-04-16 | 2020-04-29 | 20d |  |  |  | 48h |  | 10 days |
| 48 | 6.3.1.1 | Procom 1 - Document Review | 4d | 2020-02-11 | 2020-02-17 | 45 |  |  | 2020-01-23 | 2020-01-29 | 5d | 2020-04-16 | 2020-04-22 | 20d | 0d |  | Johan | 40h |  | 5 days |
| 49 | 6.3.1.2 | Procom 1 - Meeting / Approval | 1d | 2020-02-18 | 2020-02-18 | 48 |  |  | 2020-01-30 | 2020-01-30 | 1d | 2020-04-23 | 2020-04-29 | 21d |  |  | Colby | 8h |  | 5 days |

| ID | WBS | Task | Duration | Start | Finish | Predecessors | Complete | Remaining | Baseline start | Baseline finish | Baseline duration | Baseline 1 start | Baseline 1 finish | Total slack | Free slack | Constraint | Resources | Work | Actual work | Original Duration |
| --- | --- | --- | --- | --- | --- | --- | --- | --- | --- | --- | --- | --- | --- | --- | --- | --- | --- | --- | --- | --- |
| 50 | 6.4 | **Contractor Quotes to verify Estimates** | 65d | 2019-11-01 A | 2020-02-05 |  | 83% | 11.36d | 2019-11-01 | 2020-01-09 | 47d | 2019-11-21 | 2020-04-02 | 95d |  |  |  | 1048h | 896h | 91 days |
| 51 | 6.4.1 | **Electrical (Weathers / GA West / ESC)** | 65d | 2019-11-01 A | 2020-02-05 |  | 70% | 19.32d | 2019-11-01 | 2020-01-09 | 47d | 2020-02-03 | 2020-04-02 | 95d |  |  |  | 288h | 208h | 43 days |
| 52 | 6.4.1.1 | Electrical - BID package | 5d | 2019-11-01 A | 2019-11-07 A |  | 100% |  | 2019-11-01 | 2019-11-07 | 5d | 2020-02-03 | 2020-02-07 |  |  | start no earlier than 2019-11-01 | Johan | 40h | 40h | 5 days |
| 53 | 6.4.1.2 | Electrical - pre-BID meeting | 1d | 2019-11-07 | 2019-11-08 | 52 |  |  | 2019-11-08 | 2019-11-08 | 1d | 2020-02-10 | 2020-02-10 | 148d | 25d |  | Colby; Johan |  |  | 1 day |
| 54 | 6.4.1.3 | Electrical - Site visits | 6d | 2019-12-16 | 2019-12-23 | 53 |  |  | 2019-11-11 | 2019-11-18 | 6d | 2020-02-11 | 2020-02-24 | 123d |  | start no earlier than 2019-12-16 | Team | 48h |  | 10 days |
| 55 | 6.4.1.4 | Electrical - BID Preparation & Submission | 3d | 2019-12-26 A | 2019-12-30 A | 54 | 100% |  | 2019-11-19 | 2019-12-30 | 28d | 2020-02-25 | 2020-03-24 |  |  |  | Johan | 24h | 24h | 21 days |
| 56 | 6.4.1.5 | Electrical - BID Evaluation/ Clarification | 22d | 2020-01-06 A | 2020-02-05 | 55 | 82% | 4d | 2019-12-31 | 2020-01-09 | 7d | 2020-03-25 | 2020-04-02 | 2d | 0d | finish no earlier than 2020-02-05 | Johan | 176h | 144h | 7 days |
| 57 | 6.4.2 | **Mechanical (TWS / Glenn / Lavender)** | 65d | 2019-11-01 A | 2020-02-05 |  | 94% | 4d | 2019-11-01 | 2020-01-09 | 47d | 2020-02-03 | 2020-04-02 | 2d |  |  |  | 512h | 480h | 43 days |
| 58 | 6.4.2.1 | Mechanical - BID package | 5d | 2019-11-01 A | 2019-11-07 A |  | 100% |  | 2019-11-01 | 2019-11-07 | 5d | 2020-02-03 | 2020-02-07 |  |  | start no earlier than 2019-11-01 | Johan | 40h | 40h | 5 days |
| 59 | 6.4.2.2 | Mechanical - pre-BID meeting | 1d | 2019-11-08 A | 2019-11-08 A | 58 | 100% |  | 2019-11-08 | 2019-11-08 | 1d | 2020-02-10 | 2020-02-10 |  |  |  | Johan; Colby |  |  | 1 day |
| 60 | 6.4.2.3 | Mechanical - Site visits | 6d | 2019-11-11 A | 2019-11-18 A | 59 | 100% |  | 2019-11-11 | 2019-11-18 | 6d | 2020-02-11 | 2020-02-24 |  |  |  | Team | 48h | 48h | 10 days |
| 61 | 6.4.2.4 | Mechanical - BID Preparation & Submission | 28d | 2019-11-19 A | 2019-12-30 A | 60 | 100% |  | 2019-11-19 | 2019-12-30 | 28d | 2020-02-25 | 2020-03-24 |  |  |  | Johan | 224h | 224h | 21 days |
| 62 | 6.4.2.5 | Mechanical - BID Evaluation/ Clarification | 25d | 2019-12-31 A | 2020-02-05 | 61 | 84% | 4d | 2019-12-31 | 2020-01-09 | 7d | 2020-03-25 | 2020-04-02 | 2d | 0d | finish no earlier than 2020-02-05 | Johan | 200h | 168h | 7 days |
| 63 | 6.4.3 | **DCS/Programming (Premier)** | 34d | 2019-12-16 A | 2020-02-05 |  | 84% | 5.48d | 2019-12-16 | 2020-01-09 | 16d | 2019-11-21 | 2020-01-31 | 95d |  |  |  | 248h | 208h | 48 days |
| 64 | 6.4.3.1 | DCS - BID package | 3d | 2019-12-16 A | 2019-12-18 A |  | 100% |  | 2019-12-16 | 2019-12-18 | 3d | 2019-11-21 | 2019-11-27 |  |  | start no earlier than 2019-12-16 | Johan | 24h | 24h | 5 days |
| 65 | 6.4.3.2 | DCS - Site visits | 1d | 2019-12-19 | 2019-12-19 | 64 |  |  | 2019-12-19 | 2019-12-19 | 1d | 2019-11-29 | 2019-12-12 | 125d |  |  | Team | 8h |  | 10 days |
| 66 | 6.4.3.3 | DCS - BID Preparation & Submission | 5d | 2019-12-20 A | 2019-12-30 A | 65 | 100% |  | 2019-12-20 | 2019-12-30 | 5d | 2019-12-13 | 2020-01-22 |  |  |  | Johan | 40h | 40h | 25 days |
| 67 | 6.4.3.4 | DCS - BID Evaluation/ Clarification | 22d | 2020-01-06 A | 2020-02-05 | 66 | 82% | 4d | 2019-12-31 | 2020-01-09 | 7d | 2020-01-23 | 2020-01-31 | 2d | 0d | finish no earlier than 2020-02-05 | Johan | 176h | 144h | 7 days |
| 68 | 6.4.4 | **Free issue materials to contractors** | 10d | 2019-12-09 A | 2019-12-20 |  | 50% | 5d | 2019-12-09 | 2019-12-20 | 10d |  |  | 31d |  |  |  |  |  |  |
| 69 | 6.4.4.1 | Compile free issue material list | 5d | 2019-12-09 A | 2019-12-13 A |  | 100% |  | 2019-12-09 | 2019-12-13 | 5d |  |  |  |  | start no earlier than 2019-12-09 |  |  |  |  |
| 70 | 6.4.4.2 | Compile free issue material prices & lead times | 5d | 2019-12-16 | 2019-12-20 | 69 |  |  | 2019-12-16 | 2019-12-20 | 5d |  |  | 31d | 29d |  |  |  |  |  |
| 71 | 7 | **STEERCOM** | 28d? | 2020-01-02 | 2020-02-11 |  |  |  | 2020-01-02 | 2020-02-18 | 32d? | 2020-01-07 | 2020-05-07 | 40d |  |  |  | 32h |  | 85 days |
| 72 | 7.1 | **Steercom 3** | 4d | 2020-01-02 | 2020-01-07 |  |  |  | 2020-01-02 | 2020-01-07 | 4d | 2020-01-07 | 2020-01-22 | 115d |  |  |  | 32h |  | 11 days |
| 73 | 7.1.1 | Steercom 3 - Document Review | 3d | 2020-01-02 | 2020-01-06 |  |  |  | 2020-01-02 | 2020-01-06 | 3d | 2020-01-14 | 2020-01-22 | 116d |  | start no earlier than 2020-01-02 | Colby | 24h |  | 6 days |
| 74 | 7.1.2 | Steercom 3 - Meeting / Approval | 1d | 2020-01-07 | 2020-01-07 |  |  |  | 2020-01-07 | 2020-01-07 | 1d | 2020-01-07 | 2020-01-07 | 115d |  | start no earlier than 2020-01-07 | Colby | 8h |  | 1 day |

| ID | WBS | Task | Type | Duration | Start | Finish | Predecessors | Baseline start | Baseline finish | Baseline duration | Baseline 1 start | Baseline 1 finish | Total slack | Free slack | Constraint | Calendar | Resources | Work | Original Duration |
| --- | --- | --- | --- | --- | --- | --- | --- | --- | --- | --- | --- | --- | --- | --- | --- | --- | --- | --- | --- |
| 75 | 7.2 | **Steercom 4** |  | 4d? | 2020-02-06 | 2020-02-11 |  | 2020-02-12 | 2020-02-18 | 4d? | 2020-05-07 | 2020-05-07 | 16d |  |  |  |  |  | 1 day |
| 76 | 7.2.1 | Steercom 4 - Document Review |  | 3d | 2020-02-06 | 2020-02-10 |  | 2020-02-12 | 2020-02-14 | 3d |  |  | 16d | 0d | start no earlier than 2020-02-06 |  |  |  |  |
| 77 | 7.2.2 | Steercom 4 approval (approval for Gate 3) |  | 1d? | 2020-02-11 | 2020-02-11 | 76 | 2020-02-18 | 2020-02-18 | 1d? | 2020-05-07 | 2020-05-07 | 16d | 0d |  |  |  |  | 1 day |
| 78 | 8 | **GATE APPROVALS** |  | 22d | 2020-02-18 | 2020-03-19 |  | 2020-02-06 | 2020-03-05 | 19d | 2020-05-07 | 2020-06-04 | 0d |  |  |  |  | 160h | 21 days |
| 79 | 8.1 | Process completion milestone | milestone | 0d | 2020-02-18 | 2020-02-18 | 31, 19, 21, 42, 8, 10, 11, 12 | 2020-02-06 | 2020-02-06 | 0d |  |  | 2d | 0d |  |  |  |  |  |
| 80 | 8.2 | **Local approval** |  | 12d | 2020-02-19 | 2020-03-05 |  | 2020-02-07 | 2020-02-20 | 9d | 2020-05-07 | 2020-05-20 | 0d |  |  |  |  | 80h | 10 days |
| 81 | 8.2.1 | Document Review - Local |  | 9d | 2020-02-19 | 2020-03-02 | 21, 79 | 2020-02-07 | 2020-02-19 | 9d | 2020-05-07 | 2020-05-13 | 2d |  |  |  | Colby | 72h | 5 days |
| 82 | 8.2.2 | Gate 3 approval - Local |  | 1d | 2020-03-05 | 2020-03-05 | 81 | 2020-02-20 | 2020-02-20 | 1d | 2020-05-14 | 2020-05-20 | 0d |  |  | Board Meetings | Colby | 8h | 5 days |
| 83 | 8.3 | **Global approval** |  | 10d | 2020-03-06 | 2020-03-19 |  | 2020-02-21 | 2020-03-05 | 10d | 2020-05-21 | 2020-06-04 | 0d |  |  |  |  | 80h | 11 days |
| 84 | 8.3.1 | Document Review - Global |  | 9d | 2020-03-06 | 2020-03-18 | 82, 77 | 2020-02-21 | 2020-03-04 | 9d | 2020-05-21 | 2020-06-03 | 0d |  |  |  | Colby | 72h | 10 days |
| 85 | 8.3.2 | Gate 3 approval - Global |  | 1d | 2020-03-19 | 2020-03-19 | 84, 49 | 2020-03-05 | 2020-03-05 | 1d | 2020-06-04 | 2020-06-04 | 0d |  |  | Board Meetings | Colby | 8h | 1 day |
