# SRL Gbeni MMU Implementation

Schedule from MS Project, 2020-02-03 to 2021-02-03, status date 2016-11-24.
Iluka Resources Limited
Use "Bulk Civil Earthworks" calendar for bulk earthworks as rainy season (May to end October) makes eartworks virtually impossible.

## Calendars

- Standard: Mon-Fri 08:00-12:00, 13:00-17:00; Sat-Sun off.
- Bulk civil earthworks: Mon-Fri 08:00-12:00, 13:00-17:00; Sat-Sun off.

## Resources

| Resource |
| --- |
| Procurement team |
| Project manager |
| Project Engineer |
| Cost Engineer |

## Schedule

| ID | WBS | Task | Type | Duration | Start | Finish | Predecessors | Total slack | Free slack | Constraint | Resources | Work |
| --- | --- | --- | --- | --- | --- | --- | --- | --- | --- | --- | --- | --- |
| 1 | 1 | **Milestones** |  | 233d | 2020-03-13 | 2021-02-03 |  | 0d |  |  |  |  |
| 2 | 1.1 | Execute MEP | milestone | 0d | 2020-03-13 | 2020-03-13 | 9 | 233d |  | start no earlier than 2016-12-14 |  |  |
| 3 | 1.2 | Commisisoning completed | milestone | 0d | 2021-02-03 | 2021-02-03 | 178 | 0d |  |  |  |  |
| 4 | 2 | **Study Phase** |  | 55d | 2020-02-03 | 2020-04-17 |  | 0d |  |  |  | 1160h |
| 5 | 2.1 | **Project Management** |  | 18d | 2020-02-19 | 2020-03-13 |  | 36d |  |  |  | 200h |
| 6 | 2.1.1 | Execute CAPEX |  | 5d | 2020-02-24 | 2020-02-28 | 22, 23, 24, 14, 17, 20, 26, 25, 18, 19, 21, 11 | 33d | 0d |  | Project manager | 40h |
| 7 | 2.1.2 | OPEX |  | 5d | 2020-02-19 | 2020-02-25 | 12, 11 | 36d | 3d |  | Project manager | 40h |
| 8 | 2.1.3 | Execute MEP |  | 1w | 2020-02-24 | 2020-02-28 | 6FF, 7FF | 33d | 0d |  | Project manager | 40h |
| 9 | 2.1.4 | MEP Review and Approval |  | 2w | 2020-03-02 | 2020-03-13 | 8 | 61d | 0d |  | Project manager | 80h |
| 10 | 2.2 | **Mine and operations planning** |  | 12d | 2020-02-03 | 2020-02-18 |  | 36d |  |  |  |  |
| 11 | 2.2.1 | Mine layouts, pit design and schedules |  | 10d | 2020-02-05 | 2020-02-18 | 12 | 36d | 0d |  |  |  |
| 12 | 2.2.2 | Mining concept |  | 2d | 2020-02-03 | 2020-02-04 |  | 36d | 0d |  |  |  |
| 13 | 2.3 | **Metallurgy & Process Engineering** |  | 5d | 2020-02-03 | 2020-02-07 |  | 33d |  |  |  | 80h |
| 14 | 2.3.1 | Slurry pumping and pipe line design (including booster requirements) |  | 5d | 2020-02-03 | 2020-02-07 |  | 33d | 0d |  | Project Engineer | 40h |
| 15 | 2.3.2 | Control philosphy |  | 5d | 2020-02-03 | 2020-02-07 |  | 126d | 75d |  | Project Engineer | 40h |
| 16 | 2.4 | **CSMP&ECI Engineering** |  | 25d | 2020-02-03 | 2020-03-06 |  | 0d |  |  |  | 280h |
| 17 | 2.4.1 | New water pump - process water dam to MU |  | 5d | 2020-02-03 | 2020-02-07 |  | 43d | 10d |  | Project Engineer | 40h |
| 18 | 2.4.2 | LV Electrical SOW (service water,Lighting, Instrumentation) |  | 2w | 2020-02-03 | 2020-02-14 |  | 38d | 5d |  | Project Engineer | 80h |
| 19 | 2.4.3 | Process control / telemetry prelim design (control philosophy, func spec) & SOW for detailed engineering |  | 3w | 2020-02-03 | 2020-02-21 |  | 33d | 0d |  | Project Engineer | 120h |
| 20 | 2.4.4 | Booster pump station D&C SOW |  | 5d | 2020-02-10 | 2020-02-14 | 14 | 38d | 5d |  | Project Engineer | 40h |
| 21 | 2.4.5 | Detailed piping design SOW development |  | 1w | 2020-02-10 | 2020-02-14 | 14 | 38d | 5d |  |  |  |
| 22 | 2.4.6 | MMD sizer specification |  | 5d | 2020-02-03 | 2020-02-07 |  | 33d | 0d |  |  |  |
| 23 | 2.4.7 | D&C Gbeni Mining Unit SOW |  | 10d | 2020-02-10 | 2020-02-21 | 22, 14 | 33d | 0d |  |  |  |
| 24 | 2.4.8 | D&C Gbeni Scrubber Unit SOW |  | 10d | 2020-02-03 | 2020-02-14 |  | 38d | 5d |  |  |  |
| 25 | 2.4.9 | HV Power Distribution Study Estimate (load flow analysis / protection study /earthing) |  | 10d | 2020-02-03 | 2020-02-14 |  | 38d | 5d |  |  |  |
| 26 | 2.4.10 | Gbeni prelim civil design (hard stands, corridors) |  | 2w | 2020-02-03 | 2020-02-14 |  | 38d | 5d |  |  |  |
| 27 | 2.4.11 | EPCM SOW Development - sep portion MMU |  | 25d | 2020-02-03 | 2020-03-06 |  | 0d |  |  |  |  |
| 28 | 2.4.12 | EPCM SOW Development - sep portion expit scrubber plant |  | 25d | 2020-02-03 | 2020-03-06 |  | 0d |  |  |  |  |
| 29 | 2.4.13 | EPCM SOW Development - infrastructure (HV, LV, control, overland piping, boosters, water, civils) |  | 25d | 2020-02-03 | 2020-03-06 |  | 0d |  |  |  |  |

Notes:
- 16: Civil, Structural, Mechanical and Piping and Electrical, Control and Instrumentation

| ID | WBS | Task | Type | Duration | Start | Finish | Predecessors | Total slack | Free slack | Resources | Work |
| --- | --- | --- | --- | --- | --- | --- | --- | --- | --- | --- | --- |
| 30 | 2.5 | **Procurement** |  | 50d | 2020-02-10 | 2020-04-17 |  | 18d |  |  | 600h |
| 31 | 2.5.1 | **Gbeni MMD Sizer Procurement (Sole source)** |  | 36d | 2020-02-10 | 2020-03-30 |  | 59d |  |  | 328h |
| 32 | 2.5.1.1 | CPRF Part A |  | 5d | 2020-02-10 | 2020-02-14 | 22 | 69d | 10d | Procurement team | 40h |
| 33 | 2.5.1.2 | Request for Quotation |  | 15d | 2020-02-10 | 2020-02-28 | 32FF, 22 | 59d | 0d | Procurement team | 120h |
| 34 | 2.5.1.3 | Review submission |  | 10d | 2020-03-02 | 2020-03-13 | 33 | 59d | 0d | Procurement team | 80h |
| 35 | 2.5.1.4 | CPRF Part B |  | 10d | 2020-03-16 | 2020-03-27 | 34 | 59d | 0d | Procurement team | 80h |
| 36 | 2.5.1.5 | Place order |  | 1d | 2020-03-30 | 2020-03-30 | 35, 9 | 59d | 0d | Procurement team | 8h |
| 37 | 2.5.2 | **EPCM Contracting** |  | 32d | 2020-03-05 | 2020-04-17 |  | 0d |  |  | 272h |
| 38 | 2.5.2.1 | CPRF Part A |  | 2d | 2020-03-05 | 2020-03-06 | 29FF, 28FF, 27FF | 0d |  | Procurement team | 16h |
| 39 | 2.5.2.2 | Request for Quotation |  | 15d | 2020-03-09 | 2020-03-27 | 38 | 0d |  | Procurement team | 120h |
| 40 | 2.5.2.3 | Review submission |  | 10d | 2020-03-30 | 2020-04-10 | 39 | 0d |  | Procurement team | 80h |
| 41 | 2.5.2.4 | CPRF Part B |  | 5d | 2020-04-13 | 2020-04-17 | 40 | 0d |  | Procurement team | 40h |
| 42 | 2.5.2.5 | Place order (1, 2 or 3) |  | 2d | 2020-04-16 | 2020-04-17 | 41FF, 8 | 0d |  | Procurement team | 16h |
| 43 | 3 | **Execute Phase** |  | 222d | 2020-03-31 | 2021-02-03 |  | 0d |  |  | 1088h |
| 44 | 3.1 | **Project Management** |  | 15d | 2020-04-17 | 2020-05-08 |  | 45d |  |  | 120h |
| 45 | 3.1.1 | Execute Kick-Off | milestone | 0d | 2020-04-17 | 2020-04-17 | 42 | 45d | 0d | Project manager |  |
| 46 | 3.1.2 | Execute Charter finalised |  | 5d | 2020-04-20 | 2020-04-24 | 45 | 45d | 0d | Project manager | 40h |
| 47 | 3.1.3 | PEP development and team mobilisation (project handover) |  | 10d | 2020-04-27 | 2020-05-08 | 46 | 193d |  | Project manager | 80h |
| 48 | 3.2 | **MMD Sizer Procurement** |  | 121d | 2020-03-31 | 2020-09-15 |  | 59d |  |  | 968h |
| 49 | 3.2.1 | Procure twin drives & gearboxes for sizer |  | 16w | 2020-03-31 | 2020-07-20 | 36 | 59d | 0d | Procurement team | 640h |
| 50 | 3.2.2 | Complete assembly |  | 8w | 2020-07-21 | 2020-09-14 | 49 | 59d | 0d | Procurement team | 320h |
| 51 | 3.2.3 | Free issue to MU Fabricator |  | 1d | 2020-09-15 | 2020-09-15 | 49, 50 | 59d | 3d | Procurement team | 8h |
| 52 | 3.3 | **Gbeni Mining Unit (EPCM sep portion 1)** |  | 160d | 2020-04-20 | 2020-11-27 |  | 36d |  |  |  |
| 53 | 3.3.1 | PEP development and team mobilisation |  | 10d | 2020-04-20 | 2020-05-01 | 42, 9 | 36d | 0d |  |  |
| 54 | 3.3.2 | Detail Design |  | 8w | 2020-05-04 | 2020-06-26 | 53 | 36d | 0d |  |  |
| 55 | 3.3.3 | Procure transformer |  | 16w | 2020-06-29 | 2020-10-16 | 54 | 36d | 0d |  |  |
| 56 | 3.3.4 | Fabrication (QA/QC inclusive) |  | 12w | 2020-06-29 | 2020-09-18 | 54 | 56d | 0d |  |  |
| 57 | 3.3.5 | Install sizer |  | 5d | 2020-09-21 | 2020-09-25 | 51, 56 | 56d | 20d |  |  |
| 58 | 3.3.6 | Install & terminate transformer |  | 5d | 2020-10-19 | 2020-10-23 | 55 | 36d | 0d |  |  |
| 59 | 3.3.7 | Assembly and FAT | milestone | 0w | 2020-10-23 | 2020-10-23 | 57, 58 | 36d | 0d |  |  |
| 60 | 3.3.8 | Relocate to site |  | 2w | 2020-10-26 | 2020-11-06 | 59 | 36d | 0d |  |  |
| 61 | 3.3.9 | Site assembly & installation |  | 2w | 2020-11-09 | 2020-11-20 | 60, 137, 139 | 36d | 0d |  |  |
| 62 | 3.3.10 | Pre-commissioning |  | 5d | 2020-11-23 | 2020-11-27 | 61, 175 | 36d |  |  |  |

| ID | WBS | Task | Duration | Start | Finish | Predecessors | Total slack | Free slack | Constraint |
| --- | --- | --- | --- | --- | --- | --- | --- | --- | --- |
| 63 | 3.4 | **Gbeni Scrubber Unit (EPCM sep portion 2)** | 196d | 2020-04-20 | 2021-01-18 |  | 0d |  |  |
| 64 | 3.4.1 | PEP development and team mobilisation | 10d | 2020-04-20 | 2020-05-01 | 42 | 0d |  |  |
| 65 | 3.4.2 | Detail Design | 4w | 2020-04-30 | 2020-05-27 | 64FS-2d | 0d |  |  |
| 66 | 3.4.3 | Procure transformer | 16w | 2020-05-28 | 2020-09-16 | 65 | 35d |  |  |
| 67 | 3.4.4 | Scrubber Unit fabrication | 6mo | 2020-05-14 | 2020-10-28 | 65FS-10d | 10d |  |  |
| 68 | 3.4.5 | Scrubber Plant fabrication | 6mo | 2020-05-28 | 2020-11-11 | 65 | 0d |  |  |
| 69 | 3.4.6 | Mechanical assembly (QA/QC inclusive) | 3w | 2020-11-05 | 2020-11-25 | 66, 68FS-5d, 67FS-5d | 0d |  |  |
| 70 | 3.4.7 | Install & terminate transformer | 5d | 2020-11-24 | 2020-11-30 | 66, 69FS-2d | 0d |  |  |
| 71 | 3.4.8 | Stripping & packing | 2w | 2020-12-01 | 2020-12-14 | 70 | 0d |  |  |
| 72 | 3.4.9 | Relocate to site | 2w | 2020-12-15 | 2020-12-28 | 68, 71 | 0d |  |  |
| 73 | 3.4.10 | Site assembly & installation | 2w | 2020-12-29 | 2021-01-11 | 72 | 0d |  |  |
| 74 | 3.4.11 | Pre-commissioning | 5d | 2021-01-12 | 2021-01-18 | 73, 175 | 0d |  |  |
| 75 | 3.5 | **Infrastructure (EPCM sep portion 3)** | 146d | 2020-04-20 | 2020-11-09 |  | 25d |  |  |
| 76 | 3.5.1 | **Project Management** | 10d | 2020-04-20 | 2020-05-01 |  | 25d |  |  |
| 77 | 3.5.1.1 | PEP development and team mobilisation | 10d | 2020-04-20 | 2020-05-01 | 42 | 25d | 0d |  |
| 78 | 3.5.2 | **Engineering & subcontracting** | 71d | 2020-04-20 | 2020-07-27 |  | 35d |  |  |
| 79 | 3.5.2.1 | **Engineering (infrastructure)** | 30d | 2020-05-04 | 2020-06-12 |  | 25d |  |  |
| 80 | 3.5.2.1.1 | Detailed piping design, specification and S&I SOW | 3w | 2020-05-04 | 2020-05-22 | 21FF, 77 | 81d | 0d |  |
| 81 | 3.5.2.1.2 | Gbeni detailed civil design (hard stands, corridors) | 3w | 2020-05-04 | 2020-05-22 | 26, 77 | 120d | 0d |  |
| 82 | 3.5.2.1.3 | Gbeni HV Power Distribution Detailed Design | 6w | 2020-05-04 | 2020-06-12 | 77 | 55d | 0d | start no earlier than 2016-11-07 |
| 83 | 3.5.2.1.4 | Gbeni LV Detailed Design | 4w | 2020-05-04 | 2020-05-29 | 77, 18 | 60d | 0d |  |
| 84 | 3.5.2.1.5 | Gbeni Process Control & Telemetry Detailed Design | 10d | 2020-05-04 | 2020-05-15 | 77, 19 | 25d | 0d |  |
| 85 | 3.5.2.2 | **Procurement (infrastructure)** | 71d | 2020-04-20 | 2020-07-27 |  | 35d |  |  |
| 86 | 3.5.2.2.1 | **Gbeni Earthworks** | 31d | 2020-05-11 | 2020-06-22 |  | 120d |  |  |
| 87 | 3.5.2.2.1.1 | CPRF Part A | 5d | 2020-05-25 | 2020-05-29 | 81, 46FF, 77 | 120d | 0d |  |
| 88 | 3.5.2.2.1.2 | Request for Tender | 15d | 2020-05-11 | 2020-05-29 | 87FF | 120d | 0d |  |
| 89 | 3.5.2.2.1.3 | Tender reviews | 5d | 2020-06-01 | 2020-06-05 | 88 | 120d | 0d |  |
| 90 | 3.5.2.2.1.4 | Contract negotiations | 5d | 2020-06-08 | 2020-06-12 | 89 | 120d | 0d |  |
| 91 | 3.5.2.2.1.5 | CPRF Part B | 5d | 2020-06-15 | 2020-06-19 | 90 | 120d | 0d |  |
| 92 | 3.5.2.2.1.6 | Award Contract | 1d | 2020-06-22 | 2020-06-22 | 91, 9 | 120d | 0d |  |

| ID | WBS | Task | Duration | Start | Finish | Predecessors | Total slack | Free slack |
| --- | --- | --- | --- | --- | --- | --- | --- | --- |
| 93 | 3.5.2.2.2 | **Booster Pump Station (D&C tender)** | 42d | 2020-04-20 | 2020-06-16 |  | 54d |  |
| 94 | 3.5.2.2.2.1 | CPRF Part A | 5d | 2020-05-04 | 2020-05-08 | 20, 46FF, 77 | 54d | 0d |
| 95 | 3.5.2.2.2.2 | Request for Tender | 15d | 2020-04-20 | 2020-05-08 | 94FF | 54d | 0d |
| 96 | 3.5.2.2.2.3 | Tender reviews | 10d | 2020-05-11 | 2020-05-22 | 95 | 54d | 0d |
| 97 | 3.5.2.2.2.4 | Contract negotiations | 10d | 2020-05-25 | 2020-06-05 | 96 | 54d | 0d |
| 98 | 3.5.2.2.2.5 | CPRF Part B | 5d | 2020-06-08 | 2020-06-12 | 97 | 54d | 0d |
| 99 | 3.5.2.2.2.6 | Award Contract | 2d | 2020-06-15 | 2020-06-16 | 98 | 54d | 0d |
| 100 | 3.5.2.2.3 | **New Process Water Pump** | 41d | 2020-04-20 | 2020-06-15 |  | 100d |  |
| 101 | 3.5.2.2.3.1 | CPRF Part A | 5d | 2020-05-04 | 2020-05-08 | 17, 46FF, 77 | 100d | 0d |
| 102 | 3.5.2.2.3.2 | Request for Tender | 15d | 2020-04-20 | 2020-05-08 | 101FF | 100d | 0d |
| 103 | 3.5.2.2.3.3 | Tender reviews | 10d | 2020-05-11 | 2020-05-22 | 102 | 100d | 0d |
| 104 | 3.5.2.2.3.4 | Contract negotiations | 10d | 2020-05-25 | 2020-06-05 | 103 | 100d | 0d |
| 105 | 3.5.2.2.3.5 | CPRF Part B | 5d | 2020-06-08 | 2020-06-12 | 104 | 100d | 0d |
| 106 | 3.5.2.2.3.6 | Award Contract | 1d | 2020-06-15 | 2020-06-15 | 105 | 100d | 0d |
| 107 | 3.5.2.2.4 | **Overland Piping** | 41d | 2020-05-11 | 2020-07-06 |  | 90d |  |
| 108 | 3.5.2.2.4.1 | CPRF Part A | 5d | 2020-05-25 | 2020-05-29 | 80, 77 | 90d | 0d |
| 109 | 3.5.2.2.4.2 | Request for Tender | 15d | 2020-05-11 | 2020-05-29 | 108FF | 90d | 0d |
| 110 | 3.5.2.2.4.3 | Tender reviews | 10d | 2020-06-01 | 2020-06-12 | 109 | 90d | 0d |
| 111 | 3.5.2.2.4.4 | Contract negotiations | 10d | 2020-06-15 | 2020-06-26 | 110 | 90d | 0d |
| 112 | 3.5.2.2.4.5 | CPRF Part B | 5d | 2020-06-29 | 2020-07-03 | 111 | 90d | 0d |
| 113 | 3.5.2.2.4.6 | Award Contract | 1d | 2020-07-06 | 2020-07-06 | 112 | 90d | 0d |
| 114 | 3.5.2.2.5 | **Gbeni HV Power Distribution (Supply and Install tender)** | 41d | 2020-06-01 | 2020-07-27 |  | 55d |  |
| 115 | 3.5.2.2.5.1 | CPRF Part A | 5d | 2020-06-15 | 2020-06-19 | 82, 46FF, 77 | 55d | 0d |
| 116 | 3.5.2.2.5.2 | Request for Tender | 15d | 2020-06-01 | 2020-06-19 | 115FF | 55d | 0d |
| 117 | 3.5.2.2.5.3 | Tender reviews | 10d | 2020-06-22 | 2020-07-03 | 116 | 55d | 0d |
| 118 | 3.5.2.2.5.4 | Contract negotiations | 10d | 2020-07-06 | 2020-07-17 | 117 | 55d | 0d |
| 119 | 3.5.2.2.5.5 | CPRF Part B | 5d | 2020-07-20 | 2020-07-24 | 118 | 55d | 0d |
| 120 | 3.5.2.2.5.6 | Award Contract | 1d | 2020-07-27 | 2020-07-27 | 119, 9 | 55d | 0d |

| ID | WBS | Task | Duration | Start | Finish | Predecessors | Total slack | Free slack | Calendar |
| --- | --- | --- | --- | --- | --- | --- | --- | --- | --- |
| 121 | 3.5.2.2.6 | **LV Electrical SOW (service water,Lighting, Instrumentation) (Supply and Install tender)** | 41d | 2020-05-18 | 2020-07-13 | 46 | 60d |  |  |
| 122 | 3.5.2.2.6.1 | CPRF Part A | 5d | 2020-06-01 | 2020-06-05 | 83, 77 | 60d | 0d |  |
| 123 | 3.5.2.2.6.2 | Request for Tender | 15d | 2020-05-18 | 2020-06-05 | 122FF | 60d | 0d |  |
| 124 | 3.5.2.2.6.3 | Tender reviews | 10d | 2020-06-08 | 2020-06-19 | 123 | 60d | 0d |  |
| 125 | 3.5.2.2.6.4 | Contract negotiations | 10d | 2020-06-22 | 2020-07-03 | 124 | 60d | 0d |  |
| 126 | 3.5.2.2.6.5 | CPRF Part B | 5d | 2020-07-06 | 2020-07-10 | 125 | 60d | 0d |  |
| 127 | 3.5.2.2.6.6 | Award Contract | 1d | 2020-07-13 | 2020-07-13 | 126 | 60d | 0d |  |
| 128 | 3.5.2.2.7 | **Process Control and Telemetry Supply and Install** | 41d | 2020-05-04 | 2020-06-29 |  | 25d |  |  |
| 129 | 3.5.2.2.7.1 | CPRF Part A | 5d | 2020-05-18 | 2020-05-22 | 19, 46FF, 77, 84 | 25d | 0d |  |
| 130 | 3.5.2.2.7.2 | Request for Tender | 15d | 2020-05-04 | 2020-05-22 | 129FF | 25d | 0d |  |
| 131 | 3.5.2.2.7.3 | Tender reviews | 10d | 2020-05-25 | 2020-06-05 | 130 | 25d | 0d |  |
| 132 | 3.5.2.2.7.4 | Contract negotiations | 10d | 2020-06-08 | 2020-06-19 | 131 | 25d | 0d |  |
| 133 | 3.5.2.2.7.5 | CPRF Part B | 5d | 2020-06-22 | 2020-06-26 | 132 | 25d | 0d |  |
| 134 | 3.5.2.2.7.6 | Award Contract | 1d | 2020-06-29 | 2020-06-29 | 133 | 25d | 0d |  |
| 135 | 3.5.3 | **Construction** | 105d | 2020-06-16 | 2020-11-09 |  | 35d |  |  |
| 136 | 3.5.3.1 | **Gbeni Mine Development** | 54d | 2020-06-23 | 2020-09-04 |  | 96d |  |  |
| 137 | 3.5.3.1.1 | Gbeni Earthworks & hardstands | 15d | 2020-06-29 | 2020-07-17 | 92, 65, 54 | 116d | 80d | Bulk civil earthworks |
| 138 | 3.5.3.1.2 | Gbeni Pipe Corridors | 10d | 2020-06-23 | 2020-07-06 | 92 | 140d | 50d | Bulk civil earthworks |
| 139 | 3.5.3.1.3 | Dewatering infrastructure instalation & commissioning | 15d | 2020-08-17 | 2020-09-04 | 92, 175 | 81d | 45d |  |
| 140 | 3.5.3.2 | **Gbeni Process Control & Telemetry** | 95d | 2020-06-30 | 2020-11-09 |  | 25d |  |  |
| 141 | 3.5.3.2.1 | Procurement of equipment | 4w | 2020-06-30 | 2020-07-27 | 134, 77 | 90d | 40d |  |
| 142 | 3.5.3.2.2 | Coding, FAT | 12w | 2020-06-30 | 2020-09-21 | 134, 15 | 25d | 0d |  |
| 143 | 3.5.3.2.3 | Transport to site | 2w | 2020-09-22 | 2020-10-05 | 141, 142 | 50d | 0d |  |
| 144 | 3.5.3.2.4 | Site installation | 4w | 2020-10-06 | 2020-11-02 | 143 | 50d | 0d |  |
| 145 | 3.5.3.2.5 | Pre-commissioning | 5d | 2020-11-03 | 2020-11-09 | 144, 175 | 50d |  |  |

| ID | WBS | Task | Duration | Start | Finish | Predecessors | Total slack | Free slack |
| --- | --- | --- | --- | --- | --- | --- | --- | --- |
| 146 | 3.5.3.3 | **Gbeni Booster Pumps Units** | 100d | 2020-06-17 | 2020-11-03 |  | 54d |  |
| 147 | 3.5.3.3.1 | Detail Design | 4w | 2020-06-17 | 2020-07-14 | 99 | 54d | 0d |
| 148 | 3.5.3.3.2 | Fabrication | 8w | 2020-07-15 | 2020-09-08 | 147 | 54d | 0d |
| 149 | 3.5.3.3.3 | Assembly and FAT | 3w | 2020-09-09 | 2020-09-29 | 148 | 54d | 0d |
| 150 | 3.5.3.3.4 | Disassembly, package and relocate to site | 2w | 2020-09-30 | 2020-10-13 | 149 | 54d | 0d |
| 151 | 3.5.3.3.5 | Site installation | 2w | 2020-10-14 | 2020-10-27 | 150 | 54d | 0d |
| 152 | 3.5.3.3.6 | Pre-commissioning | 5d | 2020-10-28 | 2020-11-03 | 151, 175 | 54d |  |
| 153 | 3.5.3.4 | **Process Water Pump** | 55d | 2020-06-16 | 2020-08-31 |  | 100d |  |
| 154 | 3.5.3.4.1 | Procurement of equipment | 4w | 2020-06-16 | 2020-07-13 | 106 | 100d | 0d |
| 155 | 3.5.3.4.2 | Transport to site | 2w | 2020-07-14 | 2020-07-27 | 154 | 100d | 0d |
| 156 | 3.5.3.4.3 | Site installation | 4w | 2020-07-28 | 2020-08-24 | 155 | 100d | 0d |
| 157 | 3.5.3.4.4 | Pre-commissioning | 5d | 2020-08-25 | 2020-08-31 | 156, 175 | 100d |  |
| 158 | 3.5.3.5 | **Overland Piping** | 55d | 2020-07-07 | 2020-09-21 |  | 90d |  |
| 159 | 3.5.3.5.1 | Procurement of equipment | 4w | 2020-07-07 | 2020-08-03 | 113 | 90d | 0d |
| 160 | 3.5.3.5.2 | Transport to site | 2w | 2020-08-04 | 2020-08-17 | 159 | 90d | 0d |
| 161 | 3.5.3.5.3 | Site installation | 4w | 2020-08-18 | 2020-09-14 | 160, 138FF | 90d | 0d |
| 162 | 3.5.3.5.4 | Pre-commissioning | 5d | 2020-09-15 | 2020-09-21 | 161, 175 | 90d |  |
| 163 | 3.5.3.6 | **Gbeni HV Power Distribution** | 70d | 2020-07-28 | 2020-11-02 |  | 55d |  |
| 164 | 3.5.3.6.1 | Procurement of equipment | 8w | 2020-07-28 | 2020-09-21 | 120 | 55d | 0d |
| 165 | 3.5.3.6.2 | Transport to site | 2w | 2020-09-22 | 2020-10-05 | 164 | 55d | 0d |
| 166 | 3.5.3.6.3 | Site installation | 3w | 2020-10-06 | 2020-10-26 | 165 | 55d | 0d |
| 167 | 3.5.3.6.4 | Pre-commissioning | 5d | 2020-10-27 | 2020-11-02 | 166, 175 | 55d |  |
| 168 | 3.5.3.7 | **Gbeni LV Electrical Installation (service water, Lighting, Instrumentation)** | 75d | 2020-07-14 | 2020-10-26 |  | 60d |  |
| 169 | 3.5.3.7.1 | Procurement of equipment | 8w | 2020-07-14 | 2020-09-07 | 127 | 60d | 0d |
| 170 | 3.5.3.7.2 | Transport to site | 2w | 2020-09-08 | 2020-09-21 | 169 | 60d | 0d |
| 171 | 3.5.3.7.3 | Site installation | 4w | 2020-09-22 | 2020-10-19 | 170 | 60d | 0d |
| 172 | 3.5.3.7.4 | Pre-commissioning | 5d | 2020-10-20 | 2020-10-26 | 171, 175 | 60d |  |

| ID | WBS | Task | Duration | Start | Finish | Predecessors | Total slack | Free slack |
| --- | --- | --- | --- | --- | --- | --- | --- | --- |
| 173 | 3.6 | **Commissioning** | 183d | 2020-05-25 | 2021-02-03 |  | 0d |  |
| 174 | 3.6.1 | Operator training and Operational Readiness | 12w | 2020-09-22 | 2020-12-14 | 15, 80, 142 | 25d |  |
| 175 | 3.6.2 | Commissioning planning | 12w | 2020-05-25 | 2020-08-14 | 15, 80 | 81d | 0d |
| 176 | 3.6.3 | Dry-commissioning | 1w | 2021-01-19 | 2021-01-25 | 62, 152, 172, 74, 157, 167, 145, 174 | 0d |  |
| 177 | 3.6.4 | Wet-commisisoning | 2d | 2021-01-26 | 2021-01-27 | 176, 162 | 0d |  |
| 178 | 3.6.5 | Mineral commisioning & handover | 5d | 2021-01-28 | 2021-02-03 | 177 | 0d |  |
