# C:\Users\Willem van der Merwe\Documents\1NEP DOCS\AATMS PLANNING\Proxa water\Schedule\NVBE\NVBE_BaselineSchedule_Rev C_20180702_Update

Schedule from MS Project, 2019-06-27 to 2020-07-14, status date 2019-10-11, A marks actual dates.

## Calendars

- Standard: Mon-Fri 08:00-12:00, 13:00-17:00; Sat-Sun off.
- Proxa Calendar: Mon-Fri 08:00-12:00, 13:00-17:00; Sat-Sun off. Exceptions (off unless hours are given): 2019-08-09 (National Womens Day), 2019-08-15 (Weather), 2019-09-05 (Weather), 2019-09-12 (Weather), 2019-09-24 (Heritage Day), 2019-12-17 to 2020-01-07 (Shutdown), 2020-01-08 to 2020-01-10 (Weather), 2020-01-14 to 2020-01-17 (Weather), 2020-01-21 to 2020-01-24 (Weather), 2020-02-05 to 2020-02-06 (Weather), 2020-02-12 to 2020-02-13 (Weather), 2020-02-19 to 2020-02-20 (Weather), 2020-02-26 to 2020-02-27 (Weather), 2020-03-04 to 2020-03-05 (Weather), 2020-03-11 to 2020-03-12 (Weather), 2020-03-18 (Waether), 2020-03-19 (Weather), 2020-03-25 to 2020-03-26 (Weather), 2020-04-08 to 2020-04-09 (Weather), 2020-04-15 to 2020-04-16 (Weather), 2020-04-22 (Weather), 2020-05-06 (Weather), 2020-05-13 (Weather), 2020-06-10 (Weather).
- Proxa Operations: Mon-Fri 08:00-12:00, 13:00-17:00; Sat-Sun off.
- Proxa Short shut: Mon-Fri 08:00-12:00, 13:00-17:00; Sat-Sun off. Exceptions (off unless hours are given): 2019-09-24 (Heritage Day), 2019-12-21 to 2020-01-05 (Builders break), 2020-03-21 (Human Rights Day), 2020-04-10 (Good Friday), 2020-04-13 (Family Day), 2020-04-27 (Freedom Day), 2020-05-01 (Workers Day), 2020-06-16 (Youth Day).

## Resources

| Resource |
| --- |
| 0% |
| 100% |
| 50% |
| 70% |
| 2% |
| 30% |
| 20% |
| 80% |
| 10% |
| Koos |
| Piet |
| Jan |
| Gert |
| Andre |

## Schedule

| ID | WBS | Task | Type | Duration | Start | Finish | Predecessors | Complete | Remaining | Total slack | Free slack | Constraint | Calendar | Resources | Work | Actual work | Text1 | Supplier/Contractor |
| --- | --- | --- | --- | --- | --- | --- | --- | --- | --- | --- | --- | --- | --- | --- | --- | --- | --- | --- |
| 1 | 1 | **New Vaal Brine Expansion - from 1/8/2019** |  | 273.02d | 2019-06-27 A | 2020-07-14 |  | 46% | 146.38d | 0d |  |  |  |  | 5818.08h | 2562.01h |  |  |
| 2 | 1.1 | **Project Major Milestones** |  | 150d | 2019-12-17 | 2020-07-14 |  |  |  | 0d |  |  |  |  |  |  |  |  |
| 3 | 1.1.1 | Civil Completion | milestone | 0d | 2020-02-17 | 2020-02-17 | 62, 238, 336, 452 |  |  | 85.02d |  |  | Proxa Calendar |  |  |  |  |  |
| 4 | 1.1.2 | Electrical Installation Completion | milestone | 0d | 2020-03-24 | 2020-03-24 | 209, 317, 483 |  |  | 69.33d |  |  | Proxa Calendar |  |  |  |  |  |
| 5 | 1.1.3 | Mechanical Installation Completion | milestone | 0d | 2020-04-17 | 2020-04-17 | 157, 304, 476 |  |  | 57.02d |  |  | Proxa Calendar |  |  |  |  |  |
| 6 | 1.1.4 | **Phase Milestones:** |  | 150d | 2019-12-17 | 2020-07-14 |  |  |  | 0d |  |  |  |  |  |  |  |  |
| 7 | 1.1.4.1 | Phase 1 Complete | milestone | 0w | 2019-12-17 | 2019-12-17 | 490 |  |  | 150d |  |  |  |  |  |  |  |  |
| 8 | 1.1.4.2 | Phase 2 Start - Macdam & 50% UF/RO | milestone | 0w | 2019-12-31 | 2019-12-31 | 493SS |  |  | 140d |  | start no earlier than 2019-12-31 |  |  |  |  |  |  |
| 9 | 1.1.4.3 | Phase 3 Start - 100% UF/RO | milestone | 0w | 2020-01-28 | 2020-01-28 | 494SS |  |  | 120d |  |  |  |  |  |  |  |  |
| 10 | 1.1.4.4 | Phase 4 - non therm & existing & thermal | milestone | 0w | 2020-02-25 | 2020-02-25 | 495SS |  |  | 100d |  |  |  |  |  |  |  |  |
| 11 | 1.1.4.5 | Phase 5 - ramp up thermal | milestone | 0w | 2020-03-24 | 2020-03-24 | 496SS |  |  | 80d |  |  |  |  |  |  |  |  |
| 12 | 1.1.4.6 | Phase 6 - ramp up thermal | milestone | 0w | 2020-04-21 | 2020-04-21 | 497SS |  |  | 60d |  |  |  |  |  |  |  |  |
| 13 | 1.1.4.7 | Phase 7 Start of 31 Month Operation | milestone | 0w | 2020-07-14 | 2020-07-14 | 497 |  |  | 0d |  |  |  |  |  |  |  |  |
| 14 | 1.2 | **Client deliverables** |  | 3d | 2019-12-10 | 2019-12-13 |  |  |  | 152d |  |  |  |  |  |  | 08 Nov '17 | 17 Nov '17 |
| 15 | 1.2.1 | Client Power Supply Complete | milestone | 0d | 2019-12-10 | 2019-12-10 | 485SS |  |  | 155d |  | start no earlier than 2019-09-12 |  |  |  |  |  |  |
| 16 | 1.2.2 | Feed and Return Piping Battery Limits from Client | milestone | 0d | 2019-12-13 | 2019-12-13 | 490SS |  |  | 152d | 0d | start no earlier than 2019-09-12 |  |  |  |  |  |  |
| 17 | 1.2.3 | Product Pipeline Battery to Lethabo from Client | milestone | 0d | 2019-12-13 | 2019-12-13 | 16SS |  |  | 152d |  | start no earlier than 2019-09-12 |  |  |  |  |  |  |
| 18 | 1.3 | **Expediting, Construction & Installation** |  | 212d | 2019-06-27 A | 2020-04-17 |  | 49% | 108.39d | 61.02d |  |  |  |  | 5818.08h | 2562.01h |  |  |
| 19 | 1.3.1 | **Non Thermal Plant** |  | 168.69d | 2019-08-01 A | 2020-03-24 |  | 55% | 75.35d | 79.33d |  |  |  |  | 3872h | 1776h |  |  |
| 20 | 1.3.1.1 | **Civil Works** |  | 92d | 2019-08-01 A | 2019-12-06 |  | 62% | 34.58d | 156.02d |  |  |  |  | 1032h | 336h |  |  |
| 21 | 1.3.1.1.1 | **Filter Press Structure Concrete works** |  | 73d | 2019-08-01 A | 2019-11-11 |  | 63% | 26.98d | 175.02d |  |  |  |  | 312h | 40h |  |  |
| 22 | 1.3.1.1.1.1 | **top floor** |  | 52d | 2019-08-01 A | 2019-10-11 |  | 92% | 4.13d | 174.02d |  |  |  |  | 80h | 40h |  |  |
| 23 | 1.3.1.1.1.1.1 | place props & formwork |  | 22d | 2019-08-01 A | 2019-08-30 A |  | 100% |  |  |  | finish no earlier than 2019-08-30 | Proxa Short shut |  |  |  |  |  |
| 24 | 1.3.1.1.1.1.2 | reinforcing steel |  | 17d | 2019-08-19 A | 2019-09-10 A | 23FS-10d | 100% |  |  |  | finish no earlier than 2019-09-04 | Proxa Short shut |  |  |  |  |  |
| 25 | 1.3.1.1.1.1.3 | pre cast inspection |  | 1d | 2019-09-06 A | 2019-09-06 A | 24FS-1d | 100% |  |  |  | start no earlier than 2019-09-06 | Proxa Short shut |  |  |  |  |  |
| 26 | 1.3.1.1.1.1.4 | cast chutes |  | 1d | 2019-09-11 A | 2019-09-11 A |  | 100% |  |  |  | start no earlier than 2019-09-11 | Proxa Short shut |  |  |  |  |  |
| 27 | 1.3.1.1.1.1.5 | cast floor |  | 1d | 2019-09-11 A | 2019-09-11 A |  | 100% |  |  |  | start no earlier than 2019-09-11 | Proxa Short shut |  |  |  |  |  |
| 28 | 1.3.1.1.1.1.6 | cast bund ring beam |  | 1d | 2019-09-17 A | 2019-09-17 A | 27FS+1d | 100% |  |  |  | start no earlier than 2019-09-17 | Proxa Short shut |  |  |  |  |  |
| 29 | 1.3.1.1.1.1.7 | concrete set |  | 10d | 2019-09-12 A | 2019-09-26 A | 27 | 100% |  |  |  |  | Proxa Short shut |  |  |  |  |  |
| 30 | 1.3.1.1.1.1.8 | strip formwork & props |  | 10d | 2019-09-30 A | 2019-10-11 |  | 50% | 5d | 160.02d | 0d | start no earlier than 2019-09-30 | Proxa Short shut | Andre | 80h | 40h |  |  |
| 31 | 1.3.1.1.1.2 | western side ground level slab |  | 15d | 2019-10-14 | 2019-11-01 | 30 |  |  | 160.02d | 0d |  | Proxa Short shut | Gert | 120h |  |  |  |
| 32 | 1.3.1.1.1.3 | western side wall: arrange/bind blocks |  | 6d | 2019-11-04 | 2019-11-11 | 31 |  |  | 160.02d |  |  | Proxa Short shut | Gert | 48h |  |  |  |
| 33 | 1.3.1.1.1.4 | wall surface finishing & repair |  | 8d | 2019-10-14 | 2019-10-23 | 30 |  |  | 173.02d | 32d |  | Proxa Short shut | Andre | 64h |  |  |  |

Notes:
- 30: open to make space for haunches installation

| ID | WBS | Task | Type | Duration | Start | Finish | Predecessors | Complete | Remaining | Total slack | Free slack | Constraint | Calendar | Resources | Work | Actual work |
| --- | --- | --- | --- | --- | --- | --- | --- | --- | --- | --- | --- | --- | --- | --- | --- | --- |
| 34 | 1.3.1.1.2 | **Primary Clarifier Plinth** |  | 30d | 2019-09-12 A | 2019-10-24 |  | 68% | 9.55d | 141.02d |  |  | Proxa Short shut |  | 128h | 32h |
| 35 | 1.3.1.1.2.1 | **centre plinth** |  | 7d | 2019-09-12 A | 2019-09-20 A |  | 100% |  |  |  |  | Proxa Short shut |  |  |  |
| 36 | 1.3.1.1.2.1.1 | Place form-work |  | 7d | 2019-09-12 A | 2019-09-20 A |  | 100% |  |  |  | start no earlier than 2019-09-12 | Proxa Short shut |  |  |  |
| 37 | 1.3.1.1.2.1.2 | Reinforcing steel |  | 3d | 2019-09-16 A | 2019-09-18 A | 36FS-5d | 100% |  |  |  |  | Proxa Short shut |  |  |  |
| 38 | 1.3.1.1.2.1.3 | Cast concrete |  | 1d | 2019-09-19 A | 2019-09-19 A | 37 | 100% |  |  |  |  | Proxa Short shut |  |  |  |
| 39 | 1.3.1.1.2.2 | **Outer and inner ring** |  | 30d | 2019-09-12 A | 2019-10-24 |  | 58% | 12.73d | 141.02d |  |  | Proxa Short shut |  | 128h | 32h |
| 40 | 1.3.1.1.2.2.1 | Place formwork |  | 7d | 2019-09-12 A | 2019-09-20 A | 36SS | 100% |  |  |  | start no earlier than 2019-09-02 | Proxa Short shut |  |  |  |
| 41 | 1.3.1.1.2.2.2 | Reinforcing steel |  | 7d | 2019-09-16 A | 2019-09-25 A | 40FS-5d | 100% |  |  |  |  | Proxa Short shut |  |  |  |
| 42 | 1.3.1.1.2.2.3 | Cast concrete - base |  | 1d | 2019-09-30 A | 2019-09-30 A | 41FS+2d | 100% |  |  |  | start no earlier than 2019-08-01 | Proxa Short shut |  |  |  |
| 43 | 1.3.1.1.2.2.4 | Cast concrete - wall |  | 6d | 2019-10-01 A | 2019-10-08 |  | 67% | 2d | 141.02d | 0d |  | Proxa Short shut | Gert | 48h | 32h |
| 44 | 1.3.1.1.2.2.5 | Concrete set |  | 2d | 2019-10-09 | 2019-10-10 | 42, 43 |  |  | 141.02d | 0d |  | Proxa Short shut |  |  |  |
| 45 | 1.3.1.1.2.2.6 | Backfill G5 & concrete floor |  | 10d | 2019-10-11 | 2019-10-24 | 44 |  |  | 155.02d | 0d |  |  | Andre | 80h |  |
| 46 | 1.3.1.1.3 | **Tank farm** |  | 34d | 2019-09-18 A | 2019-11-05 |  | 40% | 20.53d | 164.02d |  |  | Proxa Short shut |  | 248h | 72h |
| 47 | 1.3.1.1.3.1 | Puddle pipes installation |  | 22d | 2019-09-18 A | 2019-10-18 | 28 | 55% | 10d | 176.02d |  | start no earlier than 2019-08-27 | Proxa Short shut |  |  |  |
| 48 | 1.3.1.1.3.2 | Wall Surface finishing |  | 31d | 2019-09-23 A | 2019-11-05 |  | 29% | 22d | 164.02d | 23d | start no earlier than 2019-09-23 | Proxa Short shut | Gert | 248h | 72h |
| 49 | 1.3.1.1.4 | **Clarified water tank** |  | 15d | 2019-09-10 A | 2019-10-01 A |  | 100% |  |  |  |  | Proxa Short shut |  |  |  |
| 50 | 1.3.1.1.4.1 | Wall Surface finishing |  | 15d | 2019-09-10 A | 2019-10-01 A |  | 100% |  |  |  | start no earlier than 2019-09-10 | Proxa Short shut |  |  |  |
| 51 | 1.3.1.1.5 | **Transformer Bay** |  | 38d | 2019-08-20 A | 2019-10-11 |  | 85% | 5.61d | 181.02d |  |  | Proxa Short shut |  | 184h | 152h |
| 52 | 1.3.1.1.5.1 | Internal floors cast, around TRFs |  | 23d | 2019-09-09 A | 2019-10-10 |  | 83% | 4d | 182.02d |  | start no earlier than 2019-09-09 | Proxa Short shut | Andre | 184h | 152h |
| 53 | 1.3.1.1.5.2 | Gates & fences: manufacture & install |  | 38d | 2019-08-20 A | 2019-10-11 |  | 87% | 5d | 181.02d | 40d | start no earlier than 2019-08-20 | Proxa Short shut |  |  |  |
| 54 | 1.3.1.1.6 | **Plant floors** |  | 34d | 2019-10-11 A | 2019-11-27 |  | 56% | 15.11d | 141.02d |  |  | Proxa Short shut |  | 32h |  |
| 55 | 1.3.1.1.6.1 | around primary clarifier |  | 4d | 2019-11-22 | 2019-11-27 | 121, 45 |  |  | 141.02d | 0d | start no earlier than 2019-09-20 | Proxa Short shut | Gert | 32h |  |
| 56 | 1.3.1.1.6.2 | between MCC & tank farm |  | 5d | 2019-10-11 A | 2019-10-17 A |  | 100% |  |  |  |  | Proxa Short shut |  |  |  |
| 57 | 1.3.1.1.7 | **Bund walls** |  | 50d | 2019-09-30 A | 2019-12-06 |  | 31% | 34.38d | 141.02d |  |  | Proxa Short shut |  | 128h | 40h |
| 58 | 1.3.1.1.7.1 | Plant Bund Section 1 (Lime Silo) |  | 9d | 2019-09-30 A | 2019-10-10 |  | 56% | 4d | 182.02d |  | start no earlier than 2019-09-30 | Proxa Short shut |  |  |  |
| 59 | 1.3.1.1.7.2 | Plant Bund Section 2 (Dosing) |  | 9d | 2019-09-30 A | 2019-10-10 |  | 56% | 4d | 182.02d |  | start no earlier than 2019-09-30 | Proxa Short shut | Gert | 72h | 40h |
| 60 | 1.3.1.1.7.3 | Plant Bund Section 3 (MCC) |  | 7d | 2019-10-18 | 2019-10-28 | 56 |  |  | 170.02d |  | start no earlier than 2019-09-23 | Proxa Short shut | Andre | 56h |  |
| 61 | 1.3.1.1.7.4 | Plant Bund Section 4 (Primary Clarifier) |  | 7d | 2019-11-28 | 2019-12-06 | 55 |  |  | 141.02d | 0d |  | Proxa Short shut |  |  |  |
| 62 | 1.3.1.1.8 | Non Thermal Civils Complete | milestone | 0d | 2019-12-06 | 2019-12-06 | 61, 56, 53, 50, 48, 33, 45 |  |  | 141.02d | 41d |  | Proxa Short shut |  |  |  |

Notes:
- 42: wait pump truck
- 48: start?
- 52: rockfill completed - do after cables
- 53: manufacturing completed - busy galvanising

| ID | WBS | Task | Duration | Start | Finish | Predecessors | Complete | Remaining | Total slack | Free slack | Constraint | Calendar | Resources | Work | Actual work |
| --- | --- | --- | --- | --- | --- | --- | --- | --- | --- | --- | --- | --- | --- | --- | --- |
| 63 | 1.3.1.2 | **Mechanical** | 85d | 2019-08-01 A | 2019-11-28 |  | 67% | 27.98d | 147.02d |  |  | Proxa Short shut |  | 2736h | 1440h |
| 64 | 1.3.1.2.1 | **Deliveries** | 9d | 2019-10-09 | 2019-10-21 |  |  |  | 154.02d |  |  | Proxa Short shut |  | 16h |  |
| 65 | 1.3.1.2.1.1 | Existing Polishing RO Feed Tank (TK-4601) - JOJO | 1d | 2019-10-09 | 2019-10-09 | 68SS |  |  | 183.02d |  | start no earlier than 2019-08-28 | Proxa Short shut |  |  |  |
| 66 | 1.3.1.2.1.2 | Filter Press Feed Tanks (TK-4701/2) - 2x on site | 1d | 2019-10-21 | 2019-10-21 | 68FS+7d |  |  | 154.02d | 0d |  | Proxa Short shut | Andre | 8h |  |
| 67 | 1.3.1.2.1.3 | Filter Press Filtrate Tank (TK-4703) (Refurb) | 1d | 2019-10-21 | 2019-10-21 | 66SS |  |  | 172.02d | 0d |  | Proxa Short shut |  |  |  |
| 68 | 1.3.1.2.1.4 | CaCO3 Filter Press (FP-4701) | 1d | 2019-10-09 | 2019-10-09 | 29FS+8d |  |  | 154.02d | 0d | start no earlier than 2019-09-18 | Proxa Short shut |  |  |  |
| 69 | 1.3.1.2.1.5 | CaSO4 Filter Press (FP-4702) | 1d | 2019-10-09 | 2019-10-09 | 29FS+8d |  |  | 163.02d | 0d |  | Proxa Short shut | Gert | 8h |  |
| 70 | 1.3.1.2.2 | **Manufacturing & Deliveries** | 72d | 2019-08-01 A | 2019-11-11 |  | 81% | 13.76d | 160.02d |  |  | Proxa Short shut |  |  |  |
| 71 | 1.3.1.2.2.1 | **Structural Steel Manufacturing** | 72d | 2019-08-01 A | 2019-11-11 |  | 81% | 13.76d | 160.02d |  |  | Proxa Short shut |  |  |  |
| 72 | 1.3.1.2.2.1.1 | Dosing Area Building Roof | 27d | 2019-08-01 A | 2019-09-06 A |  | 100% |  |  |  | start no earlier than 2019-08-01 | Proxa Short shut |  |  |  |
| 73 | 1.3.1.2.2.1.2 | Filter Press Building Roof | 51d | 2019-08-01 A | 2019-10-11 |  | 90% | 5d | 161.02d | 8d | start no earlier than 2019-08-01 | Proxa Short shut |  |  |  |
| 74 | 1.3.1.2.2.1.3 | Staircase,walkways and catladders | 54d | 2019-08-01 A | 2019-10-16 |  | 85% | 8d | 178.02d |  | start no earlier than 2019-08-01 | Proxa Short shut |  |  |  |
| 75 | 1.3.1.2.2.1.4 | Subcontractor Workshop Fabrication | 72d | 2019-08-01 A | 2019-11-11 |  | 64% | 26d | 160.02d | 13d | start no earlier than 2019-08-01 | Proxa Short shut |  |  |  |
| 76 | 1.3.1.2.3 | **Installations** | 78d | 2019-08-12 A | 2019-11-28 |  | 64% | 28.22d | 147.02d |  |  | Proxa Short shut |  | 2720h | 1440h |
| 77 | 1.3.1.2.3.1 | UF & RO Building | 39d | 2019-08-19 A | 2019-10-11 |  | 87% | 5d | 181.02d |  | start no earlier than 2019-08-19 | Proxa Short shut |  |  |  |
| 78 | 1.3.1.2.3.2 | Dosing Area Building | 10d | 2019-10-07 | 2019-10-18 | 72FS+8d |  |  | 171.02d | 20d | start no earlier than 2019-10-07 | Proxa Short shut | Andre | 80h |  |
| 79 | 1.3.1.2.3.3 | Filter Press Building | 15d | 2019-10-24 | 2019-11-13 | 73, 69 |  |  | 153.02d | 0d | start no earlier than 2019-10-24 | Proxa Short shut | Andre | 120h |  |
| 80 | 1.3.1.2.3.4 | **Tank Farm** | 42d | 2019-08-12 A | 2019-10-09 |  | 93% | 3d | 162.02d |  |  | Proxa Short shut |  |  |  |
| 81 | 1.3.1.2.3.4.1 | walkways & mixer supports | 10d | 2019-08-12 A | 2019-08-23 A |  | 100% |  |  |  | start no earlier than 2019-08-11 | Proxa Short shut |  |  |  |
| 82 | 1.3.1.2.3.4.2 | staircase to ground | 1d | 2019-08-12 A | 2019-08-12 A | 81SS | 100% |  |  |  |  | Proxa Short shut |  |  |  |
| 83 | 1.3.1.2.3.4.3 | staircase to brine soft reactor | 1d | 2019-09-13 A | 2019-09-13 A | 82, 81 | 100% |  |  |  | start no earlier than 2019-09-13 | Proxa Short shut |  |  |  |
| 84 | 1.3.1.2.3.4.4 | catladder | 1d | 2019-08-26 A | 2019-08-26 A | 83SS | 100% |  |  |  |  | Proxa Short shut |  |  |  |
| 85 | 1.3.1.2.3.4.5 | 5x mixers | 14d | 2019-08-26 A | 2019-09-12 A | 84SS | 100% |  |  |  |  | Proxa Short shut |  |  |  |
| 86 | 1.3.1.2.3.4.6 | puddle pipes - mech - blanks/connect | 15d | 2019-09-18 A | 2019-10-09 |  | 80% | 3d | 162.02d | 8d | start no earlier than 2019-09-18 | Proxa Short shut |  |  |  |

Notes:
- 77: wind conditions

| ID | WBS | Task | Duration | Start | Finish | Predecessors | Complete | Remaining | Total slack | Free slack | Constraint | Calendar | Resources | Work | Actual work |
| --- | --- | --- | --- | --- | --- | --- | --- | --- | --- | --- | --- | --- | --- | --- | --- |
| 87 | 1.3.1.2.3.5 | **Clarif water tank** | 12d | 2019-08-27 A | 2019-09-11 A |  | 100% |  |  |  |  | Proxa Short shut |  |  |  |
| 88 | 1.3.1.2.3.5.1 | pipe connections | 12d | 2019-08-27 A | 2019-09-11 A | 84 | 100% |  |  |  |  | Proxa Short shut |  |  |  |
| 89 | 1.3.1.2.3.6 | **Filter press** | 30d | 2019-10-10 | 2019-11-20 |  |  |  | 153.02d |  |  | Proxa Short shut |  | 120h |  |
| 90 | 1.3.1.2.3.6.1 | CaCO3 Filter Press (FP-4701) | 10d | 2019-10-10 | 2019-10-23 | 68 |  |  | 168.02d | 15d |  | Proxa Short shut | Gert | 80h |  |
| 91 | 1.3.1.2.3.6.2 | CaSO4 Filter Press (FP-4702) | 10d | 2019-10-10 | 2019-10-23 | 69 |  |  | 168.02d | 15d |  | Proxa Short shut |  |  |  |
| 92 | 1.3.1.2.3.6.3 | Filter Press Filtrate Tank (TK-4703) | 3d | 2019-10-22 | 2019-10-24 | 86, 66 |  |  | 154.02d | 0d |  | Proxa Short shut | Gert | 24h |  |
| 93 | 1.3.1.2.3.6.4 | Filter Press Feed Tanks (TK-4701/2) | 3d | 2019-10-22 | 2019-10-24 | 86, 67, 30 |  |  | 172.02d |  |  | Proxa Short shut |  |  |  |
| 94 | 1.3.1.2.3.6.5 | 2x sump pumps | 1d | 2019-11-08 | 2019-11-08 | 96, 30 |  |  | 154.02d | 0d |  | Proxa Short shut |  |  |  |
| 95 | 1.3.1.2.3.6.6 | staircase & catladder - compl - not delivered | 2d | 2019-11-11 | 2019-11-12 | 94, 30 |  |  | 154.02d | 0d |  | Proxa Short shut | Gert | 16h |  |
| 96 | 1.3.1.2.3.6.7 | pipes | 10d | 2019-10-25 | 2019-11-07 | 92, 30 |  |  | 154.02d | 0d |  | Proxa Short shut |  |  |  |
| 97 | 1.3.1.2.3.6.8 | other pumps | 5d | 2019-11-13 | 2019-11-19 | 95, 30 |  |  | 154.02d |  |  | Proxa Short shut |  |  |  |
| 98 | 1.3.1.2.3.6.9 | roof structure | 5d | 2019-11-14 | 2019-11-20 | 90, 91, 79 |  |  | 153.02d |  |  | Proxa Short shut |  |  |  |
| 99 | 1.3.1.2.3.7 | **Dosing** | 32d | 2019-10-10 | 2019-11-22 |  |  |  | 151.02d |  |  | Proxa Short shut |  | 320h |  |
| 100 | 1.3.1.2.3.7.1 | dosing units | 5d | 2019-10-10 | 2019-10-16 |  |  |  | 151.02d | 0d | start no earlier than 2019-10-10 | Proxa Short shut | Piet | 40h |  |
| 101 | 1.3.1.2.3.7.2 | tanks | 5d | 2019-10-17 | 2019-10-23 | 100 |  |  | 173.02d |  |  | Proxa Short shut | Piet | 40h |  |
| 102 | 1.3.1.2.3.7.3 | pumps & pipes | 25d | 2019-10-17 | 2019-11-20 | 100 |  |  | 151.02d | 0d |  | Proxa Short shut | Piet | 200h |  |
| 103 | 1.3.1.2.3.7.4 | roof structure | 5d | 2019-11-18 | 2019-11-22 | 102FS-3d, 78 |  |  | 151.02d | 4d |  | Proxa Short shut | Piet | 40h |  |
| 104 | 1.3.1.2.3.8 | **Lime silos** | 53d | 2019-09-05 A | 2019-11-19 |  | 58% | 22.08d | 154.02d |  |  | Proxa Short shut |  | 56h |  |
| 105 | 1.3.1.2.3.8.1 | staircase | 29d | 2019-09-05 A | 2019-10-16 |  | 72% | 8d | 154.02d | 0d | start no earlier than 2019-09-05 | Proxa Short shut |  |  |  |
| 106 | 1.3.1.2.3.8.2 | 2x feed conveyors | 2d | 2019-10-17 | 2019-10-18 | 105 |  |  | 154.02d | 0d |  | Proxa Short shut | Koos | 16h |  |
| 107 | 1.3.1.2.3.8.3 | pumps & pipes | 5d | 2019-11-13 | 2019-11-19 | 106FS+17d |  |  | 154.02d |  |  | Proxa Short shut | Jan | 40h |  |
| 108 | 1.3.1.2.3.9 | **RO Skid** | 42d | 2019-08-12 A | 2019-10-09 |  | 93% | 3d | 183.02d |  |  | Proxa Short shut |  | 336h | 312h |
| 109 | 1.3.1.2.3.9.1 | pipes & valves RO | 42d | 2019-08-12 A | 2019-10-09 |  | 93% | 3d | 183.02d |  |  | Proxa Short shut | Piet | 336h | 312h |
| 110 | 1.3.1.2.3.10 | **RO Skid - Polishing** | 23d | 2019-09-09 A | 2019-10-10 |  | 83% | 4d | 182.02d |  |  | Proxa Short shut |  |  |  |
| 111 | 1.3.1.2.3.10.1 | pipes & valves | 23d | 2019-09-09 A | 2019-10-10 |  | 83% | 4d | 182.02d |  | start no earlier than 2019-09-09 | Proxa Short shut |  |  |  |

| ID | WBS | Task | Duration | Start | Finish | Predecessors | Complete | Remaining | Total slack | Free slack | Constraint | Calendar | Resources | Work | Actual work |
| --- | --- | --- | --- | --- | --- | --- | --- | --- | --- | --- | --- | --- | --- | --- | --- |
| 112 | 1.3.1.2.3.11 | **UF Skid** | 71d | 2019-08-12 A | 2019-11-19 |  | 65% | 24.7d | 154.02d |  |  | Proxa Short shut |  | 64h |  |
| 113 | 1.3.1.2.3.11.1 | pipe racks | 5d | 2019-08-12 A | 2019-08-16 A |  | 100% |  |  |  | start no earlier than 2019-08-11 | Proxa Short shut |  |  |  |
| 114 | 1.3.1.2.3.11.2 | pipes & valves | 10d | 2019-08-19 A | 2019-08-30 A | 113 | 100% |  |  |  |  | Proxa Short shut |  |  |  |
| 115 | 1.3.1.2.3.11.3 | 8x strainers & membranes | 3d | 2019-10-30 | 2019-11-01 |  |  |  | 154.02d | 0d | start no earlier than 2019-10-30 | Proxa Short shut | Koos | 24h |  |
| 116 | 1.3.1.2.3.11.4 | Module installation | 5d | 2019-11-13 | 2019-11-19 | 115FS+7d |  |  | 154.02d |  |  | Proxa Short shut | Jan | 40h |  |
| 117 | 1.3.1.2.3.12 | **Primary clarifier** | 41d | 2019-10-03 A | 2019-11-28 |  | 5% | 38.78d | 147.02d |  |  | Proxa Short shut |  | 208h |  |
| 118 | 1.3.1.2.3.12.1 | install centre piece/puddle pipe | 3d | 2019-10-03 A | 2019-10-07 |  | 67% | 1d | 200.02d |  | start no earlier than 2019-10-03 |  |  |  |  |
| 119 | 1.3.1.2.3.12.2 | tank erection | 16d | 2019-10-25 | 2019-11-15 | 45 |  |  | 141.02d | 0d | start no earlier than 2019-09-08 | Proxa Short shut | Piet | 128h |  |
| 120 | 1.3.1.2.3.12.3 | pipes | 5d | 2019-11-11 | 2019-11-15 | 119FS-5d |  |  | 141.02d | 0d |  | Proxa Short shut | Piet | 40h |  |
| 121 | 1.3.1.2.3.12.4 | TF overflow | 4d | 2019-11-18 | 2019-11-21 | 120 |  |  | 141.02d | 0d |  | Proxa Short shut | Gert | 32h |  |
| 122 | 1.3.1.2.3.12.5 | walkway / bridge | 3d | 2019-11-18 | 2019-11-20 | 119 |  |  | 147.02d | 0d |  | Proxa Short shut |  |  |  |
| 123 | 1.3.1.2.3.12.6 | staircase to TF | 1d | 2019-11-21 | 2019-11-21 | 119, 122 |  |  | 147.02d | 0d |  | Proxa Short shut | Gert | 8h |  |
| 124 | 1.3.1.2.3.12.7 | PCl mixer | 5d | 2019-11-22 | 2019-11-28 | 122SS, 123 |  |  | 147.02d | 0d |  | Proxa Short shut |  |  |  |
| 125 | 1.3.1.2.3.13 | **Lime reactors** | 40d | 2019-08-26 A | 2019-10-21 |  | 72% | 11.03d | 175.02d |  |  | Proxa Short shut |  | 120h | 32h |
| 126 | 1.3.1.2.3.13.1 | walkways | 3d | 2019-08-26 A | 2019-08-28 A |  | 100% |  |  |  | start no earlier than 2019-08-23 | Proxa Short shut |  |  |  |
| 127 | 1.3.1.2.3.13.2 | 8x mixers - 90% - 1x tech issue | 28d | 2019-09-03 A | 2019-10-11 |  | 82% | 5d | 181.02d |  | start no earlier than 2019-09-03 | Proxa Short shut |  |  |  |
| 128 | 1.3.1.2.3.13.3 | pipe supports | 12d | 2019-09-12 A | 2019-09-30 A |  | 100% |  |  |  | start no earlier than 2019-09-12 | Proxa Short shut |  |  |  |
| 129 | 1.3.1.2.3.13.4 | pipes | 10d | 2019-10-01 A | 2019-10-14 | 128 | 40% | 6d | 175.02d | 0d |  | Proxa Short shut | Koos | 80h | 32h |
| 130 | 1.3.1.2.3.13.5 | Lamello packs | 5d | 2019-10-15 | 2019-10-21 | 129 |  |  | 175.02d | 28d |  | Proxa Short shut | Jan | 40h |  |
| 131 | 1.3.1.2.3.14 | **Lime clarifier 4m** | 22d | 2019-08-30 A | 2019-10-01 A |  | 100% |  |  |  |  | Proxa Short shut |  |  |  |
| 132 | 1.3.1.2.3.14.1 | LC4 walkway/bridge | 1d | 2019-08-30 A | 2019-08-30 A |  | 100% |  |  |  | start no earlier than 2019-08-29 | Proxa Short shut |  |  |  |
| 133 | 1.3.1.2.3.14.2 | LC4 mixer | 21d | 2019-09-02 A | 2019-10-01 A | 132 | 100% |  |  |  |  | Proxa Short shut |  |  |  |
| 134 | 1.3.1.2.3.15 | **MCC** | 5d | 2019-09-19 A | 2019-09-26 A |  | 100% |  |  |  |  | Proxa Short shut |  |  |  |
| 135 | 1.3.1.2.3.15.1 | supports for cable racks | 5d | 2019-09-19 A | 2019-09-26 A |  | 100% |  |  |  | start no earlier than 2019-09-19 | Proxa Short shut |  |  |  |

| ID | WBS | Task | Type | Duration | Start | Finish | Predecessors | Complete | Remaining | Total slack | Free slack | Constraint | Calendar | Resources | Work | Actual work |
| --- | --- | --- | --- | --- | --- | --- | --- | --- | --- | --- | --- | --- | --- | --- | --- | --- |
| 136 | 1.3.1.2.3.16 | **Brine soft reactor** |  | 29d | 2019-09-09 A | 2019-10-18 |  | 74% | 7.54d | 176.02d |  |  | Proxa Short shut |  | 392h | 296h |
| 137 | 1.3.1.2.3.16.1 | tank |  | 1d | 2019-10-18 | 2019-10-18 | 56 |  |  | 176.02d |  | start no earlier than 2019-09-22 | Proxa Short shut |  |  |  |
| 138 | 1.3.1.2.3.16.2 | pumps - 5402 in - 5401 wait |  | 8d | 2019-10-01 A | 2019-10-10 |  | 50% | 4d | 182.02d |  | start no earlier than 2019-10-01 | Proxa Short shut | Piet | 64h | 32h |
| 139 | 1.3.1.2.3.16.3 | staircase & catladder |  | 18d | 2019-09-16 A | 2019-10-10 |  | 78% | 4d | 182.02d |  | start no earlier than 2019-09-16 | Proxa Short shut | Koos | 144h | 112h |
| 140 | 1.3.1.2.3.16.4 | 3x mixers - 2 in - 3rd fit issue |  | 23d | 2019-09-09 A | 2019-10-10 |  | 83% | 4d | 182.02d | 35d | start no earlier than 2019-09-09 | Proxa Short shut | Jan | 184h | 152h |
| 141 | 1.3.1.2.3.17 | **Pipe supports & racks & pumps & pipes/fittings** |  | 56d | 2019-08-13 A | 2019-10-30 |  | 80% | 11.11d | 168.02d |  |  | Proxa Short shut |  | 904h | 800h |
| 142 | 1.3.1.2.3.17.1 | **Area 1 middle area** |  | 42d | 2019-08-13 A | 2019-10-10 |  | 92% | 3.36d | 182.02d |  |  | Proxa Short shut |  | 320h | 288h |
| 143 | 1.3.1.2.3.17.1.1 | pipe supports/racks |  | 5d | 2019-08-13 A | 2019-08-19 A |  | 100% |  |  |  | start no earlier than 2019-08-12 | Proxa Short shut |  |  |  |
| 144 | 1.3.1.2.3.17.1.2 | pumps |  | 5d | 2019-08-13 A | 2019-08-19 A | 143SS | 100% |  |  |  |  | Proxa Short shut |  |  |  |
| 145 | 1.3.1.2.3.17.1.3 | pipes & fittings |  | 40d | 2019-08-15 A | 2019-10-10 | 144FS-3d | 90% | 4d | 182.02d |  |  | Proxa Short shut | Piet | 320h | 288h |
| 146 | 1.3.1.2.3.17.2 | **Area 2 - filterpress area** |  | 50d | 2019-08-21 A | 2019-10-30 |  | 72% | 13.78d | 168.02d |  |  | Proxa Short shut |  | 584h | 512h |
| 147 | 1.3.1.2.3.17.2.1 | pipe supports/racks |  | 37d | 2019-08-21 A | 2019-10-11 |  | 86% | 5d | 181.02d |  | start no earlier than 2019-08-20 | Proxa Short shut | Koos | 296h | 256h |
| 148 | 1.3.1.2.3.17.2.2 | pumps - 3 in - 2 outst |  | 36d | 2019-08-21 A | 2019-10-10 |  | 89% | 4d | 182.02d |  |  | Proxa Short shut | Jan | 288h | 256h |
| 149 | 1.3.1.2.3.17.2.3 | pipes & fittings |  | 25d | 2019-09-26 A | 2019-10-30 |  | 28% | 18d | 168.02d |  | start no earlier than 2019-09-26 | Proxa Short shut |  |  |  |
| 150 | 1.3.1.2.3.17.3 | **Area 3 - tankfarm area** |  | 46d | 2019-08-19 A | 2019-10-22 |  | 82% | 8.36d | 174.02d |  |  | Proxa Short shut |  |  |  |
| 151 | 1.3.1.2.3.17.3.1 | pipe supports/racks |  | 40d | 2019-08-19 A | 2019-10-14 |  | 85% | 6d | 180.02d |  | start no earlier than 2019-08-18 | Proxa Short shut |  |  |  |
| 152 | 1.3.1.2.3.17.3.2 | pumps |  | 21d | 2019-08-19 A | 2019-09-16 A | 151SS | 100% |  |  |  |  | Proxa Short shut |  |  |  |
| 153 | 1.3.1.2.3.17.3.3 | pipes & fittings |  | 35d | 2019-09-03 A | 2019-10-22 |  | 66% | 12d | 174.02d |  | start no earlier than 2019-09-03 | Proxa Short shut |  |  |  |
| 154 | 1.3.1.2.3.17.3.4 | Product pump station |  | 3d | 2019-10-01 A | 2019-10-03 A | 152FS+5d | 100% |  |  |  | start no earlier than 2019-10-01 | Proxa Short shut |  |  |  |
| 155 | 1.3.1.2.3.18 | Feed and Return Piping Battery Limits from Client |  | 5d | 2019-10-04 | 2019-10-10 | 154 |  |  | 177.02d | 0d |  | Proxa Short shut |  |  |  |
| 156 | 1.3.1.2.3.19 | Product Pipeline Battery to Lethabo from Client |  | 5d | 2019-10-11 | 2019-10-17 | 155 |  |  | 177.02d | 30d |  | Proxa Short shut |  |  |  |
| 157 | 1.3.1.2.3.20 | Non Thermal Mechanical Complete | milestone | 0d | 2019-11-28 | 2019-11-28 | 156, 140, 130, 124, 103, 79, 75 |  |  | 147.02d | 89d |  | Proxa Short shut |  |  |  |
| 158 | 1.3.1.3 | **Electrical - Dev** |  | 119.69d | 2019-09-25 A | 2020-03-24 |  | 4% | 115.14d | 74.33d |  |  | Proxa Short shut |  | 104h |  |
| 159 | 1.3.1.3.1 | Subcontrol Test - trf oil |  | 1d | 2019-10-18 | 2019-10-21 | 164 |  |  | 175.89d |  | start no earlier than 2019-09-23 | Proxa Short shut |  |  |  |
| 160 | 1.3.1.3.2 | Installation of LV Cables - TRF |  | 3d | 2019-10-03 A | 2019-10-07 |  | 67% | 1d | 183.02d | 0d | start no earlier than 2019-10-03 | Proxa Short shut |  |  |  |
| 161 | 1.3.1.3.3 | Termination of LV Cables |  | 2d | 2019-10-08 | 2019-10-09 | 160 |  |  | 183.02d |  |  | Proxa Short shut | Gert | 16h |  |
| 162 | 1.3.1.3.4 | Installation of MV Cables |  | 2d | 2019-10-07 | 2019-10-09 | 160SS+2.13d |  |  | 174.7d | 0d |  | Proxa Short shut | Koos | 16h |  |
| 163 | 1.3.1.3.5 | Termination of MV Cables |  | 5d | 2019-10-09 | 2019-10-16 | 162 |  |  | 175.89d | 0d |  | Proxa Short shut | Jan | 40h |  |
| 164 | 1.3.1.3.6 | Commissioning of Transformers |  | 2d | 2019-10-16 | 2019-10-18 | 163 |  |  | 175.89d | 0d |  | Proxa Short shut |  |  |  |
| 165 | 1.3.1.3.7 | Installation of Genset Cables into sleeves |  | 2d | 2019-11-04 | 2019-11-05 | 162SS+3.19d |  |  | 158.02d | 0d | start no earlier than 2019-11-04 | Proxa Short shut |  |  |  |
| 166 | 1.3.1.3.8 | Termination of Genset Cables |  | 1d | 2019-11-06 | 2019-11-06 | 165 |  |  | 158.02d | 0d |  | Proxa Short shut | Piet | 8h |  |
| 167 | 1.3.1.3.9 | Commissioning of Genset |  | 2d | 2019-11-07 | 2019-11-08 | 166 |  |  | 158.02d | 0d |  | Proxa Short shut | Piet | 16h |  |
| 168 | 1.3.1.3.10 | Thermal MCC PA-1604 to Standby Power |  | 2d | 2019-11-11 | 2019-11-12 | 167 |  |  | 158.02d | 0d |  | Proxa Short shut |  |  |  |
| 169 | 1.3.1.3.11 | Pressure Exchanges- Panels (Part no the old plant) |  | 1d | 2019-11-13 | 2019-11-13 | 168 |  |  | 158.02d |  |  | Proxa Short shut | Piet | 8h |  |

| ID | WBS | Task | Type | Duration | Start | Finish | Predecessors | Complete | Remaining | Total slack | Free slack | Constraint | Calendar |
| --- | --- | --- | --- | --- | --- | --- | --- | --- | --- | --- | --- | --- | --- |
| 170 | 1.3.1.3.12 | **Power Main Cable Trays** |  | 53.5d | 2019-09-25 A | 2019-12-09 |  | 22% | 41.61d | 133.52d |  |  | Proxa Short shut |
| 171 | 1.3.1.3.12.1 | Phase 2 - e - non thermal |  | 14d | 2019-09-25 A | 2019-10-14 |  | 57% | 6d | 173.02d | 0d | start no earlier than 2019-09-25 | Proxa Short shut |
| 172 | 1.3.1.3.12.2 | Phase 3 - e - non thermal |  | 11d | 2019-10-16 | 2019-10-31 | 171SS+15.94d |  |  | 12.32d | 0d |  | Proxa Short shut |
| 173 | 1.3.1.3.12.3 | Phase 4 - e - thermal |  | 11d | 2019-11-22 | 2019-12-09 | 172SS+26.56d |  |  | 12.32d | 0d |  | Proxa Short shut |
| 174 | 1.3.1.3.13 | **Power Trays Drops** |  | 48.87d | 2019-10-09 | 2019-12-17 |  |  |  | 0d |  |  | Proxa Short shut |
| 175 | 1.3.1.3.13.1 | Phase 2 - e |  | 4d | 2019-10-09 | 2019-10-15 | 171SS+10.63d |  |  | 0d |  |  | Proxa Short shut |
| 176 | 1.3.1.3.13.2 | Phase 3 - e |  | 6d | 2019-10-31 | 2019-11-08 | 172SS+10.63d |  |  | 97.01d | 0d |  | Proxa Short shut |
| 177 | 1.3.1.3.13.3 | Phase 4 - e |  | 6d | 2019-12-09 | 2019-12-17 | 173 |  |  | 12.32d | 0d |  | Proxa Short shut |
| 178 | 1.3.1.3.14 | **E-Stop TCP Drops** |  | 43.62d | 2019-10-18 | 2019-12-18 |  |  |  | 0d |  |  | Proxa Short shut |
| 179 | 1.3.1.3.14.1 | Phase 2 - e |  | 3d | 2019-10-18 | 2019-10-23 | 175SS+6.38d |  |  | 0d |  |  | Proxa Short shut |
| 180 | 1.3.1.3.14.2 | Phase 3 - e |  | 5d | 2019-11-08 | 2019-11-15 | 176SS+6.38d |  |  | 97.01d | 0d |  | Proxa Short shut |
| 181 | 1.3.1.3.14.3 | Phase 4 - e |  | 5d | 2019-12-11 | 2019-12-18 | 177SS+2.13d |  |  | 12.32d | 0d |  | Proxa Short shut |
| 182 | 1.3.1.3.15 | **Power Cable Installation** |  | 50.5d | 2019-10-15 | 2020-01-07 |  |  |  | 129.52d |  |  | Proxa Short shut |
| 183 | 1.3.1.3.15.1 | Phase 2 - e |  | 7d | 2019-10-15 | 2019-10-23 | 171 |  |  | 173.02d |  |  | Proxa Short shut |
| 184 | 1.3.1.3.15.2 | Phase 3 - e |  | 11d | 2019-10-31 | 2019-11-15 | 172 |  |  | 156.08d |  |  | Proxa Short shut |
| 185 | 1.3.1.3.15.3 | Phase 4 - e |  | 11d | 2019-12-09 | 2020-01-07 | 173 |  |  | 129.52d | 55.19d |  | Proxa Short shut |
| 186 | 1.3.1.3.16 | **E-Stop Signal Cable Install** |  | 43.62d | 2019-10-22 | 2019-12-20 |  |  |  | 0d |  |  | Proxa Short shut |
| 187 | 1.3.1.3.16.1 | Phase 2 - e |  | 3d | 2019-10-22 | 2019-10-25 | 179SS+2.13d |  |  | 0d |  |  | Proxa Short shut |
| 188 | 1.3.1.3.16.2 | Phase 3 - e |  | 5d | 2019-11-13 | 2019-11-20 | 180SS+2.13d |  |  | 97.01d | 13.94d |  | Proxa Short shut |
| 189 | 1.3.1.3.16.3 | Phase 4 - e |  | 5d | 2019-12-13 | 2019-12-20 | 181SS+2.13d |  |  | 12.32d | 0d |  | Proxa Short shut |
| 190 | 1.3.1.3.17 | **Power & Signal Cable QC Megger & Termination & Cable** |  | 16.74d | 2019-12-05 | 2020-01-10 |  |  |  | 0d |  |  | Proxa Short shut |
| 191 | 1.3.1.3.17.1 | Phase 2 - e |  | 3d | 2019-12-05 | 2019-12-10 | 187SS+31.88d |  |  | 0d |  |  | Proxa Short shut |
| 192 | 1.3.1.3.17.2 | Phase 3 - e |  | 5d | 2019-12-10 | 2019-12-17 | 188, 191 |  |  | 83.07d | 0d |  | Proxa Short shut |
| 193 | 1.3.1.3.17.3 | Phase 4 - e |  | 5d | 2019-12-20 | 2020-01-10 | 189 |  |  | 12.32d | 0d |  | Proxa Short shut |
| 194 | 1.3.1.3.18 | Installation of RIO's |  | 7d | 2020-01-10 | 2020-01-21 | 190 |  |  | 74.33d | 0d |  | Proxa Short shut |
| 195 | 1.3.1.3.19 | Power Cable to RIO Panels |  | 4d | 2020-01-14 | 2020-01-20 | 194SS+2.13d |  |  | 120.13d |  |  | Proxa Short shut |
| 196 | 1.3.1.3.20 | Profinet Cable to Rio |  | 3d | 2020-01-21 | 2020-01-24 | 194 |  |  | 116.26d |  |  | Proxa Short shut |
| 197 | 1.3.1.3.21 | RIO 1 Instrument Cable Trays |  | 9d | 2019-10-25 | 2019-11-07 | 187 |  |  | 121.64d | 47.31d |  | Proxa Short shut |
| 198 | 1.3.1.3.22 | RIO 2 Instrument Cable Trays |  | 11d | 2020-01-21 | 2020-02-05 | 194, 197SS+5.31d |  |  | 74.33d | 0d |  | Proxa Short shut |
| 199 | 1.3.1.3.23 | RIO 3 Instrument Cable Trays |  | 11d | 2020-01-29 | 2020-02-13 | 194, 198SS+5.31d |  |  | 74.33d | 0d |  | Proxa Short shut |
| 200 | 1.3.1.3.24 | RIO 4 Instrument Cable Trays |  | 11d | 2020-02-05 | 2020-02-20 | 194, 199SS+5.31d |  |  | 74.33d | 0d |  | Proxa Short shut |
| 201 | 1.3.1.3.25 | RIO 5 Instrument Cable Trays |  | 11d | 2020-02-12 | 2020-02-27 | 194, 200SS+5.31d |  |  | 74.33d | 0d |  | Proxa Short shut |
| 202 | 1.3.1.3.26 | Loop Checks RIO 1 to 5 |  | 9d | 2020-02-27 | 2020-03-11 | 201 |  |  | 74.33d | 0d |  | Proxa Short shut |
| 203 | 1.3.1.3.27 | Motor Direction & E/stop Functional Check |  | 9d | 2020-03-11 | 2020-03-24 | 202 |  |  | 74.33d | 0d |  | Proxa Short shut |
| 204 | 1.3.1.3.28 | Installation of Pressurized Container Fans |  | 1d | 2020-02-27 | 2020-02-28 | 201 |  |  | 91.33d | 17d |  | Proxa Short shut |
| 205 | 1.3.1.3.29 | Installation of Lights |  | 21d | 2020-02-03 | 2020-03-02 |  |  |  | 90.02d |  | start no earlier than 2020-02-03 | Proxa Short shut |
| 206 | 1.3.1.3.30 | Installation of Heat Tracing cables |  | 9d | 2019-12-20 | 2020-01-16 | 189 |  |  | 122.26d |  |  | Proxa Short shut |
| 207 | 1.3.1.3.31 | Installation of 2 Dry Transformer into Containers |  | 2d | 2019-11-25 | 2019-11-26 |  |  |  | 147.02d | 0d | start no earlier than 2019-11-25 | Proxa Short shut |
| 208 | 1.3.1.3.32 | Installation of Air Conditioning Evaporators on 2 Containers |  | 2d | 2019-11-27 | 2019-11-28 | 207 |  |  | 147.02d |  |  | Proxa Short shut |
| 209 | 1.3.1.3.33 | Non Thermal Electrical Complete | milestone | 0d | 2020-03-24 | 2020-03-24 | 204, 203, 189, 185 |  |  | 74.33d | 0d |  | Proxa Short shut |

Notes:
- 197: to be checked

| ID | WBS | Task | Type | Duration | Start | Finish | Predecessors | Complete | Remaining | Total slack | Free slack | Constraint | Calendar |
| --- | --- | --- | --- | --- | --- | --- | --- | --- | --- | --- | --- | --- | --- |
| 210 | 1.3.2 | **Thermal Plant** |  | 174d | 2019-08-01 A | 2020-04-17 |  | 43% | 99.96d | 58.02d |  |  | Proxa Short shut |
| 211 | 1.3.2.1 | **Civil construction** |  | 83d | 2019-08-01 A | 2019-11-26 |  | 62% | 31.75d | 149.02d |  |  | Proxa Short shut |
| 212 | 1.3.2.1.1 | **Salt Silo** |  | 83d | 2019-08-01 A | 2019-11-26 |  | 55% | 37d | 116.02d |  |  | Proxa Short shut |
| 213 | 1.3.2.1.1.1 | Back-fill and compact: base |  | 12d | 2019-08-01 A | 2019-08-16 A |  | 100% |  |  |  | start no earlier than 2019-08-01 | Proxa Short shut |
| 214 | 1.3.2.1.1.2 | Construct Large Bases |  | 10d | 2019-08-19 A | 2019-08-30 A | 213 | 100% |  |  |  |  | Proxa Short shut |
| 215 | 1.3.2.1.1.3 | Back-fill and compact around new basis |  | 7d | 2019-09-02 A | 2019-09-10 A |  | 100% |  |  |  | start no earlier than 2019-09-02 | Proxa Short shut |
| 216 | 1.3.2.1.1.4 | **Construct Support Columns** |  | 27d | 2019-09-11 A | 2019-10-18 |  | 63% | 10d | 116.02d |  |  | Proxa Short shut |
| 217 | 1.3.2.1.1.4.1 | First lift & inspection |  | 22d | 2019-09-11 A | 2019-10-11 | 215 | 77% | 5d | 116.02d | 0d | start no earlier than 2019-09-05 | Proxa Short shut |
| 218 | 1.3.2.1.1.4.2 | Second lift |  | 5d | 2019-10-14 | 2019-10-18 | 217 |  |  | 116.02d | 0d |  | Proxa Short shut |
| 219 | 1.3.2.1.1.5 | Construct suspended Floor & inspection |  | 20d | 2019-10-21 | 2019-11-15 | 218 |  |  | 116.02d | 0d |  | Proxa Short shut |
| 220 | 1.3.2.1.1.6 | Concrete setting |  | 7d | 2019-11-18 | 2019-11-26 | 219 |  |  | 116.02d | 0d |  | Proxa Short shut |
| 221 | 1.3.2.1.2 | **FFE Area** |  | 34d | 2019-09-02 A | 2019-10-18 |  | 67% | 11.16d | 176.02d |  |  | Proxa Short shut |
| 222 | 1.3.2.1.2.1 | FFE west plinth reconstruction |  | 29d | 2019-09-02 A | 2019-10-11 | 214 | 83% | 5d | 181.02d |  | start no earlier than 2019-09-05 | Proxa Short shut |
| 223 | 1.3.2.1.2.2 | Skid Plinths after Salt Silo backfill |  | 20d | 2019-09-11 A | 2019-10-09 | 215 | 85% | 3d | 183.02d |  | start no earlier than 2019-08-23 | Proxa Short shut |
| 224 | 1.3.2.1.2.3 | Plinths - Upper |  | 4d | 2019-10-07 | 2019-10-10 |  |  |  | 182.02d |  | start no earlier than 2019-10-07 | Proxa Short shut |
| 225 | 1.3.2.1.2.4 | Plant floor - 1 (2 Sections) |  | 4d | 2019-09-17 A | 2019-09-20 A |  | 100% |  |  |  | start no earlier than 2019-09-17 | Proxa Short shut |
| 226 | 1.3.2.1.2.5 | Plant floor - 2 |  | 4d | 2019-10-07 | 2019-10-10 |  |  |  | 23.96d | 0d | start no earlier than 2019-10-07 | Proxa Short shut |
| 227 | 1.3.2.1.2.6 | Bund walls |  | 6d | 2019-10-11 | 2019-10-18 | 226 |  |  | 23.96d | 0d |  | Proxa Short shut |
| 228 | 1.3.2.1.3 | **Dryer Area** |  | 47d | 2019-08-07 A | 2019-10-11 |  | 90% | 4.9d | 181.02d |  |  | Proxa Short shut |
| 229 | 1.3.2.1.3.1 | Plinth - Upper (in dryer) |  | 30d | 2019-08-07 A | 2019-09-17 A |  | 100% |  |  |  | start no earlier than 2019-08-07 | Proxa Short shut |
| 230 | 1.3.2.1.3.2 | Plant floor - 1 |  | 10d | 2019-08-07 A | 2019-08-20 A |  | 100% |  |  |  | start no earlier than 2019-08-07 | Proxa Short shut |
| 231 | 1.3.2.1.3.3 | Plant floor - 2 |  | 3d | 2019-09-18 A | 2019-09-20 A | 229 | 100% |  |  |  |  | Proxa Short shut |
| 232 | 1.3.2.1.3.4 | Bund walls |  | 5d | 2019-10-07 | 2019-10-11 | 231 |  |  | 181.02d | 32d | start no earlier than 2019-10-07 | Proxa Short shut |
| 233 | 1.3.2.1.4 | **Additionals in existing area** |  | 18d | 2019-10-08 | 2019-10-31 |  |  |  | 0d |  |  |  |
| 234 | 1.3.2.1.4.1 | Tempered Water- heater & heat exchanger | manual | 2d | 2019-10-08 | 2019-10-09 |  |  |  |  |  | start no earlier than 2019-10-08 | Proxa Short shut |
| 235 | 1.3.2.1.4.2 | Feed station new therm |  | 2d | 2019-10-10 | 2019-10-11 | 234 |  |  | 181.02d |  |  | Proxa Short shut |
| 236 | 1.3.2.1.4.3 | Trenching for CIP pipes |  | 5d | 2019-10-23 | 2019-10-29 |  |  |  | 184.02d |  | start no earlier than 2019-10-23 |  |
| 237 | 1.3.2.1.4.4 | Trenching for electrical sleeves / cables |  | 10d | 2019-10-18 | 2019-10-31 |  |  |  | 167.02d |  | start no earlier than 2019-10-18 | Proxa Short shut |
| 238 | 1.3.2.2 | Thermal Civil Complete | milestone | 0d | 2019-11-26 | 2019-11-26 | 232, 227, 220 |  |  | 149.02d | 49d |  | Proxa Short shut |

Notes:
- 210: all work stopped 26/9 at 0900 by F
- 211: F stopped all work here 26/9 at 9:00
- 217: backfill first - rebar delivery transport strike - rebar not according to schedule - short delivery rebar - need to change formwork to include haunches - all work stopped by F 27/9
- 222: 2 were remove for excavation - need to replace - 1 normal - 1 on base - new steel order - wait steel

| ID | WBS | Task | Duration | Start | Finish | Predecessors | Complete | Remaining | Total slack | Free slack | Constraint | Calendar | Supplier/Contractor |
| --- | --- | --- | --- | --- | --- | --- | --- | --- | --- | --- | --- | --- | --- |
| 239 | 1.3.2.3 | **Mechanical manufacturing & delivery** | 55d | 2019-08-01 A | 2019-10-17 |  | 89% | 6d | 177.02d |  |  | Proxa Short shut |  |
| 240 | 1.3.2.3.1 | **South plant skids1-7 & staircase frames1-2 - VIC** | 55d | 2019-08-01 A | 2019-10-17 |  | 90% | 5.68d | 177.02d |  |  | Proxa Short shut |  |
| 241 | 1.3.2.3.1.1 | FFE Equipment Skid - Manufacturing | 10w | 2019-08-01 A | 2019-10-10 |  | 92% | 0.8w | 2d | 0d | start no earlier than 2019-08-01 | Proxa Short shut | PPTech |
| 242 | 1.3.2.3.1.2 | FFE Equipment Skid - insul & clad | 9d | 2019-10-03 A | 2019-10-15 | 241FS-6d | 22% | 7d | 177.02d | 0d |  | Proxa Short shut |  |
| 243 | 1.3.2.3.1.3 | FFE Fabrication compl, inspect & del | 2d | 2019-10-16 | 2019-10-17 | 242 |  |  | 177.02d |  |  | Proxa Short shut |  |
| 244 | 1.3.2.3.1.4 | Dryer Equipment Skid - Manufacturing | 30d | 2019-08-01 A | 2019-09-11 A |  | 100% |  |  |  | start no earlier than 2019-08-01 | Proxa Short shut | PPTech |
| 245 | 1.3.2.3.1.5 | Dryer Equipment Skid - insul & clad | 15d | 2019-09-09 A | 2019-09-30 | 244FS-3d | 93% | 1d | 4d | 0d |  | Proxa Short shut |  |
| 246 | 1.3.2.3.1.6 | Dryer Fabrication compl, inspect & del | 8d | 2019-10-01 A | 2019-10-10 | 245 | 50% | 4d | 182.02d |  |  | Proxa Short shut |  |
| 247 | 1.3.2.3.1.7 | Debottlenecking Equipment - Manufacturing | 34d | 2019-08-01 A | 2019-09-17 A |  | 100% |  |  |  | start no earlier than 2019-08-01 | Proxa Short shut |  |
| 248 | 1.3.2.3.1.8 | Debottlenecking Equipment - insul & clad | 30d | 2019-08-01 A | 2019-09-11 A |  | 100% |  |  |  | start no earlier than 2019-08-01 | Proxa Short shut |  |
| 249 | 1.3.2.3.1.9 | Debottlenecking Eqpm compl, inspect and del | 5d | 2019-09-18 A | 2019-09-25 A | 248, 247 | 100% |  |  |  |  | Proxa Short shut |  |
| 250 | 1.3.2.3.1.10 | Salt silo compl, inspect & del | 1d | 2019-09-30 | 2019-09-30 | 248, 247 |  |  | 190.02d |  | start no earlier than 2019-09-30 | Proxa Short shut |  |
| 251 | 1.3.2.3.2 | Workshop - PPE materials - tie-ins & lines | 45d | 2019-08-12 A | 2019-10-14 |  | 87% | 6d | 180.02d |  | start no earlier than 2019-08-11 | Proxa Short shut |  |
| 252 | 1.3.2.4 | **Mechanical Installation** | 132d | 2019-10-01 | 2020-04-17 |  |  |  | 10.02d |  |  | Proxa Short shut |  |
| 253 | 1.3.2.4.1 | Crane site establishment | 2d | 2019-10-21 | 2019-10-22 | 227 |  |  | 23.96d | 0d | start no earlier than 2019-08-28 | Proxa Short shut |  |
| 254 | 1.3.2.4.2 | **Debottlenecking** | 5d | 2019-10-07 | 2019-10-11 |  |  |  | 6.02d |  |  | Proxa Short shut |  |
| 255 | 1.3.2.4.2.1 | change centrifuge with new one | 4d | 2019-10-07 | 2019-10-10 |  |  |  | 6.02d | 0d | start no earlier than 2019-10-07 | Proxa Short shut |  |
| 256 | 1.3.2.4.2.2 | install new screw conveyor | 1d | 2019-10-10 | 2019-10-10 | 255FS-1d |  |  | 6.02d | 0d |  | Proxa Short shut |  |
| 257 | 1.3.2.4.2.3 | install staircase | 1d | 2019-10-11 | 2019-10-11 | 256 |  |  | 181.02d |  |  | Proxa Short shut |  |
| 258 | 1.3.2.4.2.4 | install rotary dryer - before skid 5 | 1d | 2019-10-11 | 2019-10-11 | 256 |  |  | 6.02d | 0d |  | Proxa Short shut |  |
| 259 | 1.3.2.4.3 | **Dryer platforms and staircase installation** | 40d | 2019-10-14 | 2019-12-06 |  |  |  | 6.02d |  |  | Proxa Short shut |  |
| 260 | 1.3.2.4.3.1 | Dryer western platform | 10d | 2019-10-14 | 2019-10-25 | 258 |  |  | 6.02d | 0d |  | Proxa Short shut |  |
| 261 | 1.3.2.4.3.2 | Install staircase | 10d | 2019-10-28 | 2019-11-08 | 260 |  |  | 6.02d | 0d |  | Proxa Short shut |  |
| 262 | 1.3.2.4.3.3 | Dryer northern platform | 10d | 2019-11-11 | 2019-11-22 | 261 |  |  | 6.02d | 0d |  | Proxa Short shut |  |
| 263 | 1.3.2.4.3.4 | Dryer eastern platform | 10d | 2019-11-25 | 2019-12-06 | 261, 262 |  |  | 6.02d | 0d |  | Proxa Short shut |  |

| ID | WBS | Task | Duration | Start | Finish | Predecessors | Total slack | Free slack | Constraint | Calendar |
| --- | --- | --- | --- | --- | --- | --- | --- | --- | --- | --- |
| 264 | 1.3.2.4.4 | **Skids & equipment installation** | 48d | 2019-10-23 | 2020-01-10 |  | 23.96d |  |  | Proxa Short shut |
| 265 | 1.3.2.4.4.1 | Install Skid 5 & cantil platform | 3d | 2019-10-23 | 2019-10-25 | 258, 253, 227 | 23.96d | 0d |  | Proxa Short shut |
| 266 | 1.3.2.4.4.2 | chiller package | 1d | 2019-10-28 | 2019-10-28 | 265 | 33.02d | 0d | start no earlier than 2019-08-16 | Proxa Short shut |
| 267 | 1.3.2.4.4.3 | Install Frame 2 | 1d | 2019-10-29 | 2019-10-29 | 265, 266 | 33.02d | 0d |  | Proxa Short shut |
| 268 | 1.3.2.4.4.4 | Install Skid 6 | 1d | 2019-10-30 | 2019-10-30 | 267 | 33.02d | 0d |  | Proxa Short shut |
| 269 | 1.3.2.4.4.5 | Skid 7 | 1d | 2019-10-30 | 2019-10-30 | 268SS | 33.02d | 27d |  | Proxa Short shut |
| 270 | 1.3.2.4.4.6 | Dryer fan skid 7 | 1d | 2019-12-09 | 2019-12-09 | 269, 263 | 6.02d | 0d |  | Proxa Short shut |
| 271 | 1.3.2.4.4.7 | Cyclone cy-8401 | 1d | 2019-12-05 | 2019-12-05 | 270FS-3d | 142.02d |  |  | Proxa Short shut |
| 272 | 1.3.2.4.4.8 | Skid 4 | 1d | 2019-12-10 | 2019-12-10 | 270 | 6.02d | 0d |  | Proxa Short shut |
| 273 | 1.3.2.4.4.9 | air heater | 1d | 2019-12-11 | 2019-12-11 | 272 | 6.02d | 0d |  | Proxa Short shut |
| 274 | 1.3.2.4.4.10 | skid 3 | 1d | 2019-12-12 | 2019-12-12 | 273 | 6.02d | 0d |  | Proxa Short shut |
| 275 | 1.3.2.4.4.11 | mvr fan | 1d | 2019-12-12 | 2019-12-12 | 274SS | 6.02d | 0d |  | Proxa Short shut |
| 276 | 1.3.2.4.4.12 | skid 2 | 1d | 2019-12-13 | 2019-12-13 | 275 | 6.02d | 0d |  | Proxa Short shut |
| 277 | 1.3.2.4.4.13 | FFE condensate pot | 1d | 2019-12-13 | 2019-12-13 | 276SS | 6.02d | 0d |  | Proxa Short shut |
| 278 | 1.3.2.4.4.14 | Frame 1 | 1d | 2019-12-16 | 2019-12-16 | 277 | 6.02d | 0d |  | Proxa Short shut |
| 279 | 1.3.2.4.4.15 | skid 1 | 1d | 2019-12-17 | 2019-12-17 | 278 | 6.02d | 0d |  | Proxa Short shut |
| 280 | 1.3.2.4.4.16 | FFE dryer | 1d | 2019-12-18 | 2019-12-18 | 279 | 6.02d | 0d |  | Proxa Short shut |
| 281 | 1.3.2.4.4.17 | FFE aux: landing, catladder, connection pipes | 7d | 2019-12-19 | 2020-01-10 | 280 | 6.02d | 0d |  | Proxa Short shut |
| 282 | 1.3.2.4.5 | **Salt silo** | 33d | 2019-11-27 | 2020-01-24 |  | 116.02d |  |  | Proxa Short shut |
| 283 | 1.3.2.4.5.1 | install silo floor handrails - on slab | 4d | 2019-11-27 | 2019-12-02 | 220 | 116.02d | 0d |  | Proxa Short shut |
| 284 | 1.3.2.4.5.2 | install access staircase | 3d | 2019-11-27 | 2019-11-29 | 220 | 146.02d |  |  | Proxa Short shut |
| 285 | 1.3.2.4.5.3 | silo pre-assembly | 8d | 2019-12-03 | 2019-12-12 | 283 | 116.02d | 0d | start no earlier than 2019-10-13 | Proxa Short shut |
| 286 | 1.3.2.4.5.4 | pre-ass silo struct - after FFE aux | 4d | 2020-01-13 | 2020-01-16 | 281 | 122.02d |  |  | Proxa Short shut |
| 287 | 1.3.2.4.5.5 | install maintenance structure | 1d | 2020-01-06 | 2020-01-06 | 285FS+6d, 220 | 116.02d | 0d |  | Proxa Short shut |
| 288 | 1.3.2.4.5.6 | erect structure | 1d | 2020-01-06 | 2020-01-06 | 287SS | 116.02d | 0d |  | Proxa Short shut |
| 289 | 1.3.2.4.5.7 | install silo & vibr cone | 1d | 2020-01-07 | 2020-01-07 | 288 | 116.02d | 0d |  | Proxa Short shut |
| 290 | 1.3.2.4.5.8 | install aux: catladder / pipe supp / platforms | 4d | 2020-01-07 | 2020-01-10 | 289SS | 116.02d | 0d |  | Proxa Short shut |
| 291 | 1.3.2.4.5.9 | install dust box & platform | 2d | 2020-01-13 | 2020-01-14 | 290 | 116.02d | 0d |  | Proxa Short shut |
| 292 | 1.3.2.4.5.10 | aux | 10d | 2020-01-13 | 2020-01-24 | 291SS | 116.02d | 58d |  | Proxa Short shut |

| ID | WBS | Task | Type | Duration | Start | Finish | Predecessors | Total slack | Free slack | Constraint | Calendar | Supplier/Contractor |
| --- | --- | --- | --- | --- | --- | --- | --- | --- | --- | --- | --- | --- |
| 293 | 1.3.2.4.6 | **Site piping** |  | 109d | 2019-10-01 | 2020-03-13 |  | 70.02d |  |  | Proxa Short shut |  |
| 294 | 1.3.2.4.6.1 | establish Megavaal |  | 1d | 2019-10-01 | 2019-10-01 |  | 140.02d | 8d | start no earlier than 2019-09-30 | Proxa Short shut |  |
| 295 | 1.3.2.4.6.2 | Tie-ins to exist plant |  | 25d | 2019-12-18 | 2020-02-04 | 279 | 109.02d |  |  | Proxa Short shut |  |
| 296 | 1.3.2.4.6.3 | new pipes in existing plant |  | 25d | 2019-10-11 | 2019-11-14 | 294SS | 132.02d | 0d | start no earlier than 2019-10-11 | Proxa Short shut |  |
| 297 | 1.3.2.4.6.4 | new pipes in new plant |  | 25d | 2020-01-13 | 2020-02-14 | 281 | 6.02d | 0d | start no earlier than 2019-08-23 | Proxa Short shut |  |
| 298 | 1.3.2.4.6.5 | ducting in new plant |  | 20d | 2020-02-17 | 2020-03-13 | 297 | 58.02d | 0d | start no earlier than 2019-08-23 | Proxa Short shut |  |
| 299 | 1.3.2.4.7 | Site cladding & insulation |  | 25d | 2019-11-15 | 2019-12-19 | 296 | 132.02d | 74d |  | Proxa Short shut |  |
| 300 | 1.3.2.4.8 | **Equipment Installation - existing** |  | 98d | 2019-11-18 | 2020-04-17 |  | 58.02d | 0d |  | Proxa Short shut |  |
| 301 | 1.3.2.4.8.1 | Tempered Water- heater&heat exchanger |  | 13d | 2020-03-16 | 2020-04-01 | 298 | 58.02d | 0d | start no earlier than 2019-08-30 | Proxa Short shut | TBC |
| 302 | 1.3.2.4.8.2 | Feed station new therm |  | 10d | 2020-04-02 | 2020-04-17 | 301 | 58.02d | 0d |  | Proxa Short shut |  |
| 303 | 1.3.2.4.8.3 | Install CIP pipeline |  | 2d | 2019-11-18 | 2019-11-19 |  | 169.02d |  | start no earlier than 2019-11-18 |  |  |
| 304 | 1.3.2.4.9 | Thermal Mechanical Complete | milestone | 0d | 2020-04-17 | 2020-04-17 | 302, 298, 292, 281, 258, 299, 300 | 58.02d | 0d |  | Proxa Short shut |  |
| 305 | 1.3.2.5 | **Electrical Installation - Dev** |  | 63.7d | 2019-10-28 | 2020-02-06 |  | 23.96d |  |  | Proxa Short shut |  |
| 306 | 1.3.2.5.1 | Installation of RIO's - asap |  | 3.19d | 2019-10-28 | 2019-10-31 | 265 | 23.96d | 0d |  | Proxa Short shut |  |
| 307 | 1.3.2.5.2 | Power Cable to RIO Panels |  | 5.31d | 2019-10-31 | 2019-11-07 | 306 | 162.52d |  |  | Proxa Short shut |  |
| 308 | 1.3.2.5.3 | Profinet Cable to Rio |  | 2.12d | 2019-10-31 | 2019-11-04 | 306 | 165.71d |  |  | Proxa Short shut |  |
| 309 | 1.3.2.5.4 | RIO 1 Instrument Cable Trays |  | 8.5d | 2019-10-31 | 2019-11-12 | 306 | 23.96d | 0d |  | Proxa Short shut |  |
| 310 | 1.3.2.5.5 | RIO 2 Instrument Cable Trays |  | 8.5d | 2019-11-07 | 2019-11-19 | 309SS+5.31d | 23.96d | 0d |  | Proxa Short shut |  |
| 311 | 1.3.2.5.6 | RIO 3 Instrument Cable Trays |  | 8.5d | 2019-11-14 | 2019-11-27 | 310SS+5.31d | 23.96d | 0d |  | Proxa Short shut |  |
| 312 | 1.3.2.5.7 | Fitting of 135 Instruments & Testing |  | 12.75d | 2019-11-22 | 2019-12-10 | 311SS+5.31d | 23.96d | 0d |  | Proxa Short shut |  |
| 313 | 1.3.2.5.8 | Loop Checks RIO 1 to 3 |  | 12.75d | 2019-12-10 | 2020-01-10 | 312 | 23.96d | 0d |  | Proxa Short shut |  |
| 314 | 1.3.2.5.9 | Motor Direction & E/stop Functional Check |  | 7.44d | 2020-01-10 | 2020-01-22 | 313 | 23.96d | 0d |  | Proxa Short shut |  |
| 315 | 1.3.2.5.10 | Installation of Heat Tracing cables |  | 5.31d | 2020-01-10 | 2020-01-20 | 193 | 12.32d | 0d |  | Proxa Short shut |  |
| 316 | 1.3.2.5.11 | Lights Installation Thermal |  | 15.94d | 2020-01-15 | 2020-02-06 | 315SS+3d | 12.32d | 0d |  | Proxa Short shut |  |
| 317 | 1.3.2.5.12 | Thermal Plant Electrical Complete | milestone | 0d | 2020-02-06 | 2020-02-06 | 316, 314 | 12.32d |  |  | Proxa Short shut |  |

| ID | WBS | Task | Type | Duration | Start | Finish | Predecessors | Complete | Remaining | Total slack | Free slack | Constraint | Calendar | Work | Actual work |
| --- | --- | --- | --- | --- | --- | --- | --- | --- | --- | --- | --- | --- | --- | --- | --- |
| 318 | 1.3.3 | **Existing plant** |  | 189d | 2019-06-27 A | 2020-04-01 |  | 40% | 113.52d | 68.02d |  |  | Proxa Short shut | 1946.08h | 786.01h |
| 319 | 1.3.3.1 | **Civil construction** |  | 132d | 2019-08-01 A | 2020-02-17 |  | 19% | 107.29d | 100.02d |  |  | Proxa Short shut |  |  |
| 320 | 1.3.3.1.1 | **UF BW Tank Plinth** |  | 10d | 2019-10-30 | 2019-11-12 |  |  |  | 159.02d |  |  | Proxa Short shut |  |  |
| 321 | 1.3.3.1.1.1 | Implement Outcome - after sump crack repair |  | 10d | 2019-10-30 | 2019-11-12 |  |  |  | 159.02d |  | start no earlier than 2019-10-30 | Proxa Short shut |  |  |
| 322 | 1.3.3.1.2 | **Ablution Works** |  | 26d | 2019-12-05 | 2020-01-23 |  |  |  | 117.02d |  |  | Proxa Short shut |  |  |
| 323 | 1.3.3.1.2.1 | Sewage tank installation, including excavation and backfill |  | 20d | 2019-12-05 | 2020-01-15 |  |  |  | 117.02d | 0d | start no earlier than 2019-12-05 | Proxa Short shut |  |  |
| 324 | 1.3.3.1.2.2 | Ablution unit - Delivery to site and positioning |  | 2d | 2020-01-16 | 2020-01-17 | 323 |  |  | 117.02d | 0d | start no earlier than 2019-09-16 | Proxa Short shut |  |  |
| 325 | 1.3.3.1.2.3 | Interconnecting pipework installation |  | 4d | 2020-01-20 | 2020-01-23 | 323, 324 |  |  | 117.02d | 17d |  | Proxa Short shut |  |  |
| 326 | 1.3.3.1.3 | **Chemical Bunds Repair** |  | 132d | 2019-08-01 A | 2020-02-17 |  | 23% | 101.4d | 100.02d |  |  | Proxa Short shut |  |  |
| 327 | 1.3.3.1.3.1 | Sulphuric Acid Bund Repair |  | 20d | 2019-10-30 | 2019-11-26 |  |  |  | 149.02d | 0d | start no earlier than 2019-10-30 | Proxa Short shut |  |  |
| 328 | 1.3.3.1.3.2 | Caustic bund relining |  | 15d | 2019-10-31 | 2019-11-20 |  |  |  | 153.02d | 4d | start no earlier than 2019-10-31 | Proxa Short shut |  |  |
| 329 | 1.3.3.1.3.3 | CIP Bund Repair |  | 15d | 2019-10-31 | 2019-11-20 |  |  |  | 153.02d | 4d | start no earlier than 2019-10-31 | Proxa Short shut |  |  |
| 330 | 1.3.3.1.3.4 | All Plant Chemical Bund repairs Complete | milestone | 0d | 2019-11-26 | 2019-11-26 | 327, 328, 329 |  |  | 149.02d | 49d |  | Proxa Short shut |  |  |
| 331 | 1.3.3.1.3.5 | **Chemical Store Change / Upgrade** |  | 132d | 2019-08-01 A | 2020-02-17 |  | 35% | 86.26d | 100.02d |  |  | Proxa Short shut |  |  |
| 332 | 1.3.3.1.3.5.1 | Client Approval of Chemical Store |  | 35d | 2019-08-01 A | 2019-09-18 A |  | 100% |  |  |  |  | Proxa Short shut |  |  |
| 333 | 1.3.3.1.3.5.2 | Chemical Store Manufacturing |  | 42d | 2019-10-30 | 2020-01-09 |  |  |  | 118.02d | 18d | start no earlier than 2019-10-30 | Proxa Short shut |  |  |
| 334 | 1.3.3.1.3.5.3 | Site Construction - Civil |  | 15d | 2020-01-15 | 2020-02-04 | 332FS+10d |  |  | 100.02d | 0d | start no earlier than 2020-01-15 | Proxa Short shut |  |  |
| 335 | 1.3.3.1.3.5.4 | Site Installation - Mechanical |  | 9d | 2020-02-05 | 2020-02-17 | 333, 334 |  |  | 100.02d | 0d |  | Proxa Short shut |  |  |
| 336 | 1.3.3.1.3.5.5 | Existing Plant Civils Complete | milestone | 0d | 2020-02-17 | 2020-02-17 | 335, 330, 325 |  |  | 100.02d | 0d |  | Proxa Short shut |  |  |
| 337 | 1.3.3.2 | **Mechanical manufacturing & installation - list to follow** |  | 15d | 2019-10-04 | 2019-10-24 |  |  |  | 172.02d |  |  | Proxa Short shut |  |  |
| 338 | 1.3.3.2.1 | **Equipment Installation** |  | 15d | 2019-10-04 | 2019-10-24 |  |  |  | 172.02d |  |  | Proxa Short shut |  |  |
| 339 | 1.3.3.2.1.1 | Existing Polishing RO Feed Tank (TK-4601) |  | 1d | 2019-10-04 | 2019-10-04 |  |  |  | 186.02d |  | start no earlier than 2019-10-04 | Proxa Short shut |  |  |
| 340 | 1.3.3.2.1.2 | New pipes in existing plant |  | 1d | 2019-10-24 | 2019-10-24 |  |  |  | 172.02d |  | start no earlier than 2019-10-24 | Proxa Short shut |  |  |
| 341 | 1.3.3.3 | **Electrical Installation** |  | 14d | 2019-10-11 | 2019-10-30 |  |  |  | 168.02d |  |  | Proxa Short shut |  |  |
| 342 | 1.3.3.3.1 | Additional Generator Installation including termination |  | 14d | 2019-10-11 | 2019-10-30 |  |  |  | 168.02d |  | start no earlier than 2019-10-11 | Proxa Short shut |  |  |

Notes:
- 318: all work stopped on 26/9 at 0900 by F

| ID | WBS | Task | Type | Duration | Start | Finish | Predecessors | Complete | Remaining | Total slack | Free slack | Constraint | Calendar | Resources | Work | Actual work | Supplier/Contractor |
| --- | --- | --- | --- | --- | --- | --- | --- | --- | --- | --- | --- | --- | --- | --- | --- | --- | --- |
| 343 | 1.3.3.4 | **Maintainance** |  | 189d | 2019-06-27 A | 2020-04-01 |  | 51% | 92.6d | 68.02d |  |  | Proxa Short shut |  | 1946.08h | 786.01h |  |
| 344 | 1.3.3.4.1 | **Milestones** |  | 0d | 2019-09-27 | 2019-09-27 |  |  |  | 0d |  |  | Proxa Short shut |  |  |  |  |
| 345 | 1.3.3.4.1.1 | Statutory Inspections | milestone, manual | 0d | 2019-09-27 | 2019-09-27 |  |  |  |  |  |  | Proxa Short shut |  |  |  | Boilers, Chillers, Air Receivers- Old and New |
| 346 | 1.3.3.4.2 | **Non Thermal** |  | 52.14d | 2019-09-12 A | 2019-11-26 |  | 35% | 33.67d | 149.88d |  |  | Proxa Short shut |  |  |  |  |
| 347 | 1.3.3.4.2.1 | Pre UF Items |  | 5d | 2019-10-26 A | 2019-11-26 | 358 | 8% | 4.6d | 149.88d |  |  | Proxa Short shut |  |  |  | Dates to confirm |
| 348 | 1.3.3.4.2.2 | UF 's |  | 1d | 2019-10-24 A | 2019-10-28 | 375 | 33% | 0.67d | 170.35d |  |  | Proxa Short shut |  |  |  | Dates to confirm |
| 349 | 1.3.3.4.2.3 | MP RO's | milestone, manual | 0d | 2019-10-21 | 2019-10-21 | 382 |  |  |  |  |  | Proxa Short shut |  |  |  |  |
| 350 | 1.3.3.4.2.4 | FP & HP RO | manual | 10d | 2019-10-02 A | 2019-10-15 | 391 | 30% | 7d |  |  |  | Proxa Short shut |  |  |  | Dates to confirm |
| 351 | 1.3.3.4.2.5 | Polishing RO | milestone, manual | 0d | 2019-10-16 | 2019-10-16 | 399 |  |  |  |  |  | Proxa Short shut |  |  |  | Dates to confirm |
| 352 | 1.3.3.4.2.6 | Valve Installations | manual | 3d | 2019-09-12 A | 2019-09-16 A | 426 | 100% |  |  |  |  | Proxa Short shut |  |  |  |  |
| 353 | 1.3.3.4.3 | **Thermal** |  | 29d | 2019-11-04 A | 2019-12-12 | 428 | 34% | 19.14d | 0d |  |  | Proxa Short shut |  |  |  | Dates to confirm |
| 354 | 1.3.3.4.3.1 | Re Fitment Pumps and Lines | manual | 1d | 2019-11-04 A | 2019-11-04 |  | 68% | 0.32d |  |  |  | Proxa Short shut |  |  |  |  |
| 355 | 1.3.3.4.3.2 | Re Fitment Motors | manual | 1d | 2019-11-04 A | 2019-11-04 |  | 68% | 0.32d |  |  |  | Proxa Short shut |  |  |  |  |
| 356 | 1.3.3.4.3.3 | MVR _Fans balancing | manual | 2d | 2019-12-11 | 2019-12-12 |  |  |  |  |  |  | Proxa Short shut |  |  |  |  |
| 357 | 1.3.3.4.4 | **Non-Thermal** |  | 165d | 2019-07-31 A | 2020-04-01 |  | 54% | 76.14d | 68.02d |  |  | Proxa Short shut |  | 1682.08h | 682.81h |  |
| 358 | 1.3.3.4.4.1 | **Pre UF Items** |  | 78.54d | 2019-07-31 A | 2019-11-19 |  | 37% | 49.22d | 0d |  |  | Proxa Short shut |  | 570.08h | 150.01h |  |
| 359 | 1.3.3.4.4.1.1 | Paint repairs on silo. | manual | 1d | 2019-10-30 | 2019-10-30 |  |  |  |  |  |  | Proxa Short shut | 0% | 8h |  | Awaiting compressor approval |
| 360 | 1.3.3.4.4.1.2 | **Dosing container** |  | 51d | 2019-08-26 A | 2019-11-05 |  | 52% | 24.39d | -17d | 0d |  | Proxa Short shut | 0% | 408h | 120.25h | strip and repair |
| 361 | 1.3.3.4.4.1.2.1 | Repair floor badly damaged |  | 13d | 2019-08-26 A | 2019-09-11 A |  | 100% |  |  |  |  | Proxa Short shut |  |  |  |  |
| 362 | 1.3.3.4.4.1.2.2 | Re-install Dosing stations |  | 16d | 2019-09-19 A | 2019-10-11 |  | 69% | 5d | -18d | 0d | start no earlier than 2019-09-19 | Proxa Short shut |  |  |  |  |
| 363 | 1.3.3.4.4.1.2.3 | Dosing pumps Service |  | 5d | 2019-10-14 | 2019-10-18 | 362 |  |  | -18d | 0d |  | Proxa Short shut |  |  |  |  |
| 364 | 1.3.3.4.4.1.2.4 | Re-install Dosing piping |  | 2d | 2019-10-21 | 2019-10-22 | 363 |  |  | -18d | 0d |  | Proxa Short shut |  |  |  |  |
| 365 | 1.3.3.4.4.1.2.5 | Lining of Dosing area Bunds |  | 2w | 2019-10-23 | 2019-11-05 | 364 |  |  | -18d | 0d |  | Proxa Short shut |  |  |  |  |
| 366 | 1.3.3.4.4.1.3 | **Reactor & Clarifier inside** |  | 62d | 2019-07-31 A | 2019-10-25 |  | 21% | 48.71d | 16.54d |  |  | Proxa Short shut |  | 48h | 24h | Confined Spaces - RA & Permits |
| 367 | 1.3.3.4.4.1.3.1 | Lamella packs to be visual inspected. | manual | 1d | 2019-07-31 A | 2019-07-31 A |  | 100% |  |  |  |  | Proxa Short shut | 100% | 8h | 8h |  |
| 368 | 1.3.3.4.4.1.3.2 | Install Mixer Gearbox assemblies | manual | 3d | 2019-10-11 | 2019-10-15 | 360 |  |  |  |  |  | Proxa Short shut |  |  |  |  |
| 369 | 1.3.3.4.4.1.3.3 | Clean and inspect (include UF Feed Tank). |  | 3d | 2019-09-09 A | 2019-10-18 | 368 |  | 3d | 16.54d | 0d |  | Proxa Short shut | 50% | 24h |  |  |
| 370 | 1.3.3.4.4.1.3.4 | Touch-up paint inside Clarifier |  | 1w | 2019-10-21 | 2019-10-25 | 369 |  |  | 16.54d |  |  | Proxa Short shut |  |  |  | To be determained by inspection |
| 371 | 1.3.3.4.4.1.3.5 | Butyl tape seal on mixers. | manual | 2d | 2019-09-09 A | 2019-09-10 A | 368 | 100% |  |  |  |  | Proxa Short shut | 70% | 16h | 16h | Gearboxes to be installed first |
| 372 | 1.3.3.4.4.1.4 | Replace all rubber hoses. (Burst or cracked) | manual | 10d | 2019-10-02 A | 2019-11-19 | 360 | 5% | 9.54d |  |  |  | Proxa Short shut | 2% | 80h | 3.68h |  |
| 373 | 1.3.3.4.4.1.5 | Air receiver to be pressure tested and recertified by Third party. | manual | 3d | 2019-10-30 A | 2019-11-01 |  |  | 3d |  |  |  | Proxa Short shut | 2% | 24h |  | Impact Pneumatics access - Peet |
| 374 | 1.3.3.4.4.1.6 | Remove inline static mixer, Strip, clean, assess | manual | 0.26d | 2019-10-02 A | 2019-10-04 A | 371 | 100% |  |  |  |  | Proxa Short shut | 2% | 2.08h | 2.08h |  |

Notes:
- 343: Work stopped by F on 26/9 at 0900
- 346: Phase 2
- 347: Reactor Mixer, Clarifier Screw Conveyors, Cleaning Clarifier, Dozing Station, Acid Bund, Sludge Circ Lines / Refer to LIME re Actor plans / dates for date of re assembly old mixers (5)
- 348: Corrosion Protection-Paint, Re Assemble UF ,Testing Membranes- Megavaal / Testing of Units - 44 times2 4 per day
- 349: Testing
- 350: HP RO HP Pump Conversion Pipework, PlinthETS,Corrosion Protection Paint, Project Pipe Mods,ReAsemlby Pumps, EC&I Projects Actuators and Valves
- 351: Project Pipes Mods, Feed Line HDPE, HP Pump line 2
- 352: Ex Stock
- 353: Phase 3
- 354: Dependent on Thermal New Build Access
- 355: Dependent on Thermal New Build Access
- 357: Phase 2
- 359: Soda Ash / Screw Feeder Strip Out and send for repairs (Access)
- 371: Confirm date when assembling mixers
- 372: Air and Utility Water (Megavaal) / Hose Reels / Safety Showers / Mega Vaal
- 374: UF , CEB line / Sox

| ID | WBS | Task | Type | Duration | Start | Finish | Predecessors | Complete | Remaining | Total slack | Free slack | Constraint | Calendar | Resources | Work | Actual work | Supplier/Contractor |
| --- | --- | --- | --- | --- | --- | --- | --- | --- | --- | --- | --- | --- | --- | --- | --- | --- | --- |
| 375 | 1.3.3.4.4.2 | **Main UF Units** |  | 61d | 2019-08-01 A | 2019-10-25 |  | 75% | 15.37d | 0d |  |  | Proxa Short shut |  |  |  |  |
| 376 | 1.3.3.4.4.2.1 | Floors in UF A | manual | 16d | 2019-08-21 A | 2019-09-11 A |  | 100% |  |  |  |  | Proxa Short shut |  |  |  |  |
| 377 | 1.3.3.4.4.2.2 | Floors in UF B | manual | 12d | 2019-08-28 A | 2019-09-12 A | 376 | 100% |  |  |  |  | Proxa Short shut |  |  |  |  |
| 378 | 1.3.3.4.4.2.3 | Piping in UF A |  | 15d | 2019-09-18 A | 2019-10-09 | 377 | 80% | 3d | 12d |  |  | Proxa Short shut |  |  |  |  |
| 379 | 1.3.3.4.4.2.4 | Piping in UF B |  | 50d | 2019-08-01 A | 2019-10-10 |  | 92% | 4d | 11d |  | start no earlier than 2019-08-01 | Proxa Short shut |  |  |  |  |
| 380 | 1.3.3.4.4.2.5 | Testing of UF Modules |  | 24d | 2019-09-23 A | 2019-10-25 |  | 38% | 15d | -10d | 0d | start no earlier than 2019-09-23 | Proxa Short shut |  |  |  |  |
| 381 | 1.3.3.4.4.2.6 | Installation of UF Modules | manual | 10d | 2019-10-11 | 2019-10-24 | 380 |  |  |  |  |  | Proxa Short shut |  |  |  |  |
| 382 | 1.3.3.4.4.3 | **MP RO A & B** |  | 38d | 2019-09-18 A | 2019-11-11 |  | 6% | 35.62d | 160.02d | 0d |  | Proxa Short shut |  | 128h | 8h |  |
| 383 | 1.3.3.4.4.3.1 | Remove cable rack at 2nd stage brine outlet for proper fit of pipe to vessels. |  | 2d | 2019-11-06 | 2019-11-07 | 365 |  |  | 160.02d | 0d |  | Proxa Short shut | 0% | 16h |  |  |
| 384 | 1.3.3.4.4.3.2 | Replace rusted bolts at Victaulic couplings and replace Carbon Steel Bolts with SS |  | 1d | 2019-11-08 | 2019-11-08 | 383 |  |  | 160.02d | 0d |  | Proxa Short shut | 0% | 8h |  |  |
| 385 | 1.3.3.4.4.3.3 | Remove rusted u bolts on s/steel pipes. |  | 1d | 2019-11-11 | 2019-11-11 | 384 |  |  | 160.02d |  |  | Proxa Short shut | 0% | 8h |  |  |
| 386 | 1.3.3.4.4.3.4 | Paint valve handles. |  | 1d | 2019-09-18 A | 2019-09-18 A | 385 | 100% |  |  |  |  | Proxa Short shut | 0% | 8h | 8h |  |
| 387 | 1.3.3.4.4.3.5 | Repair weld at pt 5002. |  | 1d | 2019-10-30 | 2019-10-30 |  |  |  | 168.02d |  | start no earlier than 2019-10-30 | Proxa Short shut | 0% | 8h |  |  |
| 388 | 1.3.3.4.4.3.6 | Local repair painted areas on floor. |  | 1w | 2019-10-07 | 2019-10-11 | 374 |  |  | 178.02d | 0d |  | Proxa Short shut | 0% | 40h |  |  |
| 389 | 1.3.3.4.4.3.7 | Local pickle and passivate on s/steel piping and outside piping @ KSB pump |  | 2d | 2019-10-14 | 2019-10-15 | 388 |  |  | 179.02d |  |  | Proxa Short shut | 0% | 16h |  |  |
| 390 | 1.3.3.4.4.3.8 | Local paint touch ups on cut outs and wall brackets. | manual | 3d | 2019-10-02 | 2019-10-04 | 388 |  |  |  |  |  | Proxa Short shut | 0% | 24h |  |  |
| 391 | 1.3.3.4.4.4 | **HP & FP RO** |  | 27d | 2019-09-16 A | 2019-10-23 |  | 43% | 15.43d | 0d |  |  | Proxa Short shut |  | 104h | 80h |  |
| 392 | 1.3.3.4.4.4.1 | Modify HP Pumps to Outside Container |  | 3w | 2019-10-03 A | 2019-10-23 |  | 13% | 2.6w | -13d | 0d | start no earlier than 2019-10-03 | Proxa Short shut |  |  |  |  |
| 393 | 1.3.3.4.4.4.2 | Local paint touch ups on cut outs and wall brackets. |  | 2d | 2019-09-16 A | 2019-10-15 A | 392 | 100% |  |  |  |  | Proxa Short shut | 100% | 16h | 16h | In progress |
| 394 | 1.3.3.4.4.4.3 | Local repair painted areas on floor. |  | 1w | 2019-09-18 A | 2019-10-17 A | 393 | 100% |  |  |  |  | Proxa Short shut | 50% | 40h | 40h | In progress |
| 395 | 1.3.3.4.4.4.4 | Replace cartridge filter eye bolts with s/steel. |  | 1d | 2019-09-26 A | 2019-09-26 A |  | 100% |  |  |  |  | Proxa Short shut | 50% | 8h | 8h | Cancelled |
| 396 | 1.3.3.4.4.4.5 | Replace saddles. |  | 1d | 2019-09-26 A | 2019-09-26 A |  | 100% |  |  |  |  | Proxa Short shut | 100% | 8h | 8h | Cancelled |
| 397 | 1.3.3.4.4.4.6 | PT 5107 B -Replace saddle, PT's and PI's that are leaking. |  | 1d | 2019-09-26 A | 2019-09-26 A |  | 100% |  |  |  |  | Proxa Short shut | 100% | 8h | 8h | Commissioning action |
| 398 | 1.3.3.4.4.4.7 | Incorrect backing rings fitted. Power clean and cold galv 98% Zinc |  | 3d | 2019-10-18 | 2019-10-22 |  |  |  | -12d | 0d | start no earlier than 2019-10-18 | Proxa Short shut | 0% | 24h |  |  |

Notes:
- 376: Megavaal
- 377: Megavaal
- 378: Megavaal
- 379: Megavaal
- 380: Operations
- 381: Megavaal
- 386: Or Replace
- 387: Pressure Transmitter
- 390: Red Oxide / To be painted during operation

| ID | WBS | Task | Type | Duration | Start | Finish | Predecessors | Complete | Remaining | Total slack | Free slack | Constraint | Calendar | Resources | Work | Actual work | Supplier/Contractor |
| --- | --- | --- | --- | --- | --- | --- | --- | --- | --- | --- | --- | --- | --- | --- | --- | --- | --- |
| 399 | 1.3.3.4.4.5 | **Polishing RO** |  | 10d | 2019-10-24 | 2019-11-06 |  |  |  | 154.02d | 0d |  | Proxa Short shut |  | 96h |  |  |
| 400 | 1.3.3.4.4.5.1 | Replace permeate sample valves which are leaking. |  | 2d | 2019-10-24 | 2019-10-25 | 391 |  |  | 154.02d | 0d |  | Proxa Short shut | 0% | 16h |  |  |
| 401 | 1.3.3.4.4.5.2 | Replace valve gearboxes on HV 110 A/B |  | 1d | 2019-10-28 | 2019-10-28 | 400 |  |  | 154.02d | 0d |  | Proxa Short shut | 0% | 8h |  |  |
| 402 | 1.3.3.4.4.5.3 | Replace or fix horizontal booster pump box. |  | 2d | 2019-10-29 | 2019-10-30 | 401 |  |  | 154.02d | 0d |  | Proxa Short shut | 0% | 16h |  |  |
| 403 | 1.3.3.4.4.5.4 | Local paint repair all painted areas. |  | 1d | 2019-10-31 | 2019-10-31 | 402 |  |  | 157.02d | 0d |  | Proxa Short shut | 0% | 8h |  | Commissioning action |
| 404 | 1.3.3.4.4.5.5 | Replace all rusted hand valves. |  | 1d | 2019-11-01 | 2019-11-01 | 403 |  |  | 157.02d |  |  | Proxa Short shut | 0% | 8h |  |  |
| 405 | 1.3.3.4.4.5.6 | Fit train B booster pump. |  | 2d | 2019-10-31 | 2019-11-01 | 402 |  |  | 154.02d | 0d |  | Proxa Short shut | 0% | 16h |  |  |
| 406 | 1.3.3.4.4.5.7 | Pickle and passivate jumbo filter on train B. |  | 1d | 2019-11-04 | 2019-11-04 | 405 |  |  | 154.02d | 0d |  | Proxa Short shut | 0% | 8h |  |  |
| 407 | 1.3.3.4.4.5.8 | Magflow (Fit 101 A/B) paint caps. |  | 2d | 2019-11-05 | 2019-11-06 | 406 |  |  | 154.02d |  |  | Proxa Short shut | 0% | 16h |  |  |
| 408 | 1.3.3.4.4.6 | **Freeze Plant UF** |  | 9d | 2019-11-07 | 2019-11-19 |  |  |  | 154.02d |  |  | Proxa Short shut |  | 72h |  |  |
| 409 | 1.3.3.4.4.6.1 | Paint repairs on frame. |  | 5d | 2019-11-07 | 2019-11-13 | 399 |  |  | 154.02d | 0d |  | Proxa Short shut | 0% | 40h |  | Possibly HDG |
| 410 | 1.3.3.4.4.6.2 | Replace all butterfly lock plates with s/steel or power clean and cold galv. |  | 1d | 2019-11-14 | 2019-11-14 | 409 |  |  | 154.02d | 0d |  | Proxa Short shut | 0% | 8h |  |  |
| 411 | 1.3.3.4.4.6.3 | Replace bolts at Magflow with s/steel. |  | 0.5d | 2019-11-15 | 2019-11-15 | 410 |  |  | 154.02d | 0d |  | Proxa Short shut | 0% | 4h |  |  |
| 412 | 1.3.3.4.4.6.4 | Fit isolation washers at Magflow. |  | 0.5d | 2019-11-15 | 2019-11-15 | 411 |  |  | 154.02d | 0d |  | Proxa Short shut | 0% | 4h |  |  |
| 413 | 1.3.3.4.4.6.5 | Fit missing U - bolts. |  | 1d | 2019-11-18 | 2019-11-18 | 412 |  |  | 154.02d | 0d |  | Proxa Short shut | 0% | 8h |  |  |
| 414 | 1.3.3.4.4.6.6 | Replace UF mounting bolts with s/steel. |  | 1d | 2019-11-19 | 2019-11-19 | 413 |  |  | 154.02d |  |  | Proxa Short shut | 0% | 8h |  |  |
| 415 | 1.3.3.4.4.7 | **Filter Press Tank - TK-0902** |  | 6d | 2019-10-30 | 2019-11-06 |  |  |  | 158.02d | 0d |  | Proxa Short shut |  | 48h |  |  |
| 416 | 1.3.3.4.4.7.1 | High pressure clean tank internal and external. |  | 3d | 2019-10-30 | 2019-11-01 |  |  |  | 158.02d | 0d | start no earlier than 2019-10-30 | Proxa Short shut | 0% | 24h |  | Waiting for Projects |
| 417 | 1.3.3.4.4.7.2 | Do paint touch ups internal and external. |  | 3d | 2019-11-04 | 2019-11-06 | 416 |  |  | 158.02d |  |  | Proxa Short shut | 0% | 24h |  | waiting for Projects |
| 418 | 1.3.3.4.4.8 | **Filter Press Feed Tank - TK-0901** |  | 5d | 2019-11-07 | 2019-11-13 |  |  |  | 158.02d |  |  | Proxa Short shut |  | 40h |  |  |
| 419 | 1.3.3.4.4.8.1 | High pressure clean tank internal and external. |  | 2d | 2019-11-07 | 2019-11-08 | 415 |  |  | 158.02d | 0d |  | Proxa Short shut | 0% | 16h |  | Waiting for Projects |
| 420 | 1.3.3.4.4.8.2 | Do paint touch ups internal and external. |  | 3d | 2019-11-11 | 2019-11-13 | 419 |  |  | 158.02d |  |  | Proxa Short shut | 0% | 24h |  | Waiting for Projects |
| 421 | 1.3.3.4.4.9 | **O&M Punch List** |  | 147d | 2019-08-26 A | 2020-04-01 |  | 71% | 42.22d | 0d |  |  | Proxa Short shut |  | 624h | 444.8h |  |
| 422 | 1.3.3.4.4.9.1 | Extended shut(mothball)PM (mainly rotating equipment)in place for plant-How do we ensure and monitor that all action are preformed? - Johan to ensure that it happens as per PM schedules | milestone, manual | 0d | 2019-08-26 A | 2019-08-26 A |  | 100% |  |  |  |  | Proxa Short shut | 100% |  |  |  |
| 423 | 1.3.3.4.4.9.2 | Centrifuge's-Contact Multotech | manual | 17d | 2019-09-16 A | 2019-10-09 |  | 82% | 3d |  |  |  | Proxa Short shut | 30% | 136h | 112h | Projects to remove |
| 424 | 1.3.3.4.4.9.3 | MVR _Fans balancing | manual | 23d | 2020-03-02 A | 2020-04-01 |  | 20% | 18.4d |  |  |  | Proxa Short shut | 20% | 184h | 36.8h | TAP A access to be arranged |
| 425 | 1.3.3.4.4.9.4 | Variable speed drive installations | manual | 11d | 2019-09-16 A | 2019-10-01 A |  | 100% |  |  |  |  | Proxa Short shut | 80% | 88h | 88h | Pol RO |
| 426 | 1.3.3.4.4.9.5 | Valves Installations | manual | 22d | 2019-08-26 A | 2019-09-25 A |  | 100% |  |  |  |  | Proxa Short shut | 70% | 176h | 176h | JjvR - In progress |
| 427 | 1.3.3.4.4.9.6 | Lights need to be repaired | manual | 5d | 2019-10-01 A | 2019-10-07 |  | 80% | 1d |  |  |  | Proxa Short shut | 10% | 40h | 32h | Reuben to repair - |

Notes:
- 401: Procure and Fit New Gearbox
- 404: Done with Gearboxes, Valve Handles etc. / Order Lever Valves
- 406: Eye Bolts
- 407: 2
- 408: Remain in position - Add CEB Line
- 415: Filter Press Building needs to becomplete
- 418: Filter Press Building needs to becomplete
- 423: Phase 3 / As soon access for mobile crane
- 424: Phase 3…
- 425: Refurb and recon - confirm if completed
- 426: On Order
- 427: Maintenance

| ID | WBS | Task | Type | Duration | Start | Finish | Predecessors | Complete | Remaining | Total slack | Free slack | Constraint | Calendar | Resources | Work | Actual work | Supplier/Contractor |
| --- | --- | --- | --- | --- | --- | --- | --- | --- | --- | --- | --- | --- | --- | --- | --- | --- | --- |
| 428 | 1.3.3.4.5 | **Thermal** |  | 101.8d | 2019-06-27 A | 2019-11-18 |  | 34% | 67.24d | -7.8d | 0d |  | Proxa Short shut |  | 264h | 103.2h |  |
| 429 | 1.3.3.4.5.1 | Remove all carbon steel bolts from s/steel flanges |  | 2d | 2019-10-30 A | 2019-10-31 | 422 | 10% | 1.8d | -2d | 0d |  | Proxa Short shut | 50% | 16h | 1.6h | Waiting for Projects as not to do unneeded work |
| 430 | 1.3.3.4.5.2 | Rusted and corroded bellow rings to be blasted and hot dipped galvanized. |  | 5d | 2019-10-30 A | 2019-11-05 | 429 | 50% | 2.5d | -2d | 0d |  | Proxa Short shut | 10% | 40h | 20h | Removed, to be sent out |
| 431 | 1.3.3.4.5.3 | S/steel sludge lines not properly flushed. | milestone | 0d | 2019-08-26 A | 2019-08-26 A | 429 | 100% |  |  |  |  | Proxa Short shut | 10% |  |  | Pipes to be stripped for cleaning; scheduled for 27 June |
| 432 | 1.3.3.4.5.4 | Mild steel supports connected to s/steel to be replaced with s/steel. |  | 3d | 2019-11-01 | 2019-11-05 | 429 |  |  | -2d | 0d |  | Proxa Short shut | 0% | 24h |  | JC to advise ( Megavaal scope ? ) |
| 433 | 1.3.3.4.5.5 | Poor welding on s/steel lines to be repaired |  | 5d | 2019-06-27 A | 2019-07-03 A |  | 100% |  |  |  |  | Proxa Short shut | 100% | 40h | 40h |  |
| 434 | 1.3.3.4.5.6 | Chiller barricading badly corroded. (Blast and repaint) |  | 5d | 2019-10-30 A | 2019-11-06 | 429 | 20% | 4d | -8d | 0d |  | Proxa Short shut | 20% | 40h | 8h | Awaiting compressor approval |
| 435 | 1.3.3.4.5.7 | Chiller c/steel piping and valves badly corroded. (#3) |  | 5d | 2019-11-07 | 2019-11-13 | 434 |  |  | -8d | 0d |  | Proxa Short shut | 0% | 40h |  | Paint Repairs |
| 436 | 1.3.3.4.5.8 | Strip, blast & Re-furbish- heat exchanger. (HX-1301) |  | 3d | 2019-10-30 A | 2019-11-18 | 435 | 7% | 2.8d | -10.8d | 0d |  | Proxa Short shut | 100% | 24h | 1.6h | Removed |
| 437 | 1.3.3.4.5.9 | Safety guards on pumps damaged. |  | 5d | 2019-10-30 A | 2019-11-05 | 422 | 80% | 1d | -2d | 0d |  | Proxa Short shut | 100% | 40h | 32h | As pumps are refurbished, guards are repaired |
| 438 | 1.3.3.4.5.10 | Welding Repair FC HE |  | 5d | 2019-11-07 | 2019-11-13 | 434 |  |  | -8d | 0d |  | Proxa Short shut |  |  |  |  |
| 439 | 1.3.4 | **Macdam Plant** |  | 98d | 2019-08-01 A | 2019-12-17 |  | 51% | 47.94d | 134.02d |  |  | Proxa Short shut |  |  |  |  |
| 440 | 1.3.4.1 | **Civil construction** |  | 84d | 2019-08-01 A | 2019-11-27 |  | 55% | 38d | 148.02d |  |  | Proxa Short shut |  |  |  |  |
| 441 | 1.3.4.1.1 | Risk accessments |  | 45d | 2019-08-01 A | 2019-10-03 A |  | 100% |  |  |  | start no earlier than 2019-08-01 | Proxa Short shut |  |  |  |  |
| 442 | 1.3.4.1.2 | Site establishment |  | 5d | 2019-10-04 A | 2019-10-10 | 441 | 20% | 4d | 0.02d | 0d | start no earlier than 2019-08-26 | Proxa Short shut |  |  |  |  |
| 443 | 1.3.4.1.3 | Excavate crane pad |  | 10d | 2019-10-11 | 2019-10-24 | 442 |  |  | 0.02d | 0d | start no earlier than 2019-08-26 | Proxa Short shut |  |  |  |  |
| 444 | 1.3.4.1.4 | Import material & compact |  | 7d | 2019-10-25 | 2019-11-04 | 443 |  |  | 0.02d | 0d | start no earlier than 2019-08-26 | Proxa Short shut |  |  |  |  |
| 445 | 1.3.4.1.5 | Material blending |  | 2d | 2019-11-05 | 2019-11-06 | 444 |  |  | 0.02d | 0d |  | Proxa Short shut |  |  |  |  |
| 446 | 1.3.4.1.6 | Cutting & compacting access ramp |  | 3d | 2019-11-07 | 2019-11-11 | 444, 445 |  |  | 0.02d | 0d | start no earlier than 2019-08-26 | Proxa Short shut |  |  |  |  |
| 447 | 1.3.4.1.7 | Anchor excavation & shuttering |  | 2d | 2019-11-12 | 2019-11-13 | 446 |  |  | 147.02d | 0d | start no earlier than 2019-08-26 | Proxa Short shut |  |  |  |  |
| 448 | 1.3.4.1.8 | Casting anchor |  | 3d | 2019-11-14 | 2019-11-18 | 447 |  |  | 147.02d | 0d | start no earlier than 2019-08-26 | Proxa Short shut |  |  |  |  |
| 449 | 1.3.4.1.9 | Concrete sleepers import & set out |  | 3d | 2019-11-19 | 2019-11-21 | 448 |  |  | 147.02d | 0d | start no earlier than 2019-08-26 | Proxa Short shut |  |  |  |  |
| 450 | 1.3.4.1.10 | Trenching for electrical sleeves / cables |  | 1d | 2019-11-22 | 2019-11-22 | 449 |  |  | 148.02d | 0d | start no earlier than 2019-08-26 | Proxa Short shut |  |  |  |  |
| 451 | 1.3.4.1.11 | Leveling & compacting of delivery rd |  | 3d | 2019-11-25 | 2019-11-27 | 450 |  |  | 148.02d | 0d | start no earlier than 2019-08-26 | Proxa Short shut |  |  |  |  |
| 452 | 1.3.4.1.12 | Macdam civil complete | milestone | 0d | 2019-11-27 | 2019-11-27 | 451 |  |  | 148.02d | 48d |  | Proxa Short shut |  |  |  |  |

Notes:
- 428: Phase 3
- 438: Megavaal
- 439: 27/9: waiting Seriti to supply electr power line

| ID | WBS | Task | Type | Duration | Start | Finish | Predecessors | Complete | Remaining | Total slack | Free slack | Constraint | Calendar | Supplier/Contractor |
| --- | --- | --- | --- | --- | --- | --- | --- | --- | --- | --- | --- | --- | --- | --- |
| 453 | 1.3.4.2 | **Mechanical manufacturing & installation** |  | 86d | 2019-08-16 A | 2019-12-16 |  | 51% | 41.85d | 135.02d |  |  | Proxa Short shut |  |
| 454 | 1.3.4.2.1 | **Deliveries** |  | 77d | 2019-08-29 A | 2019-12-16 |  | 44% | 43.07d | 135.02d |  |  | Proxa Short shut | TBC |
| 455 | 1.3.4.2.1.1 | Anchors |  | 34d | 2019-08-29 A | 2019-10-16 |  | 76% | 8d | 178.02d |  | start no earlier than 2019-08-29 | Proxa Short shut | TBC |
| 456 | 1.3.4.2.1.2 | Barge system |  | 1d | 2019-11-26 | 2019-11-26 | 467 |  |  | 149.02d |  | start no earlier than 2019-07-01 | Proxa Short shut | TBC |
| 457 | 1.3.4.2.1.3 | Boats |  | 1d | 2019-11-19 | 2019-11-19 | 466 |  |  | 135.02d | 0d | start no earlier than 2019-07-01 | Proxa Short shut |  |
| 458 | 1.3.4.2.1.4 | HDPE Pipes & fittings |  | 20d | 2019-11-19 | 2019-12-16 | 457SS |  |  | 135.02d |  | start no earlier than 2019-07-01 | Proxa Short shut |  |
| 459 | 1.3.4.2.1.5 | Pumps |  | 1d | 2019-11-26 | 2019-11-26 | 467 |  |  | 149.02d |  | start no earlier than 2019-07-01 | Proxa Short shut |  |
| 460 | 1.3.4.2.1.6 | Tank |  | 1d | 2019-12-09 | 2019-12-09 | 473 |  |  | 140.02d |  | start no earlier than 2019-07-01 | Proxa Short shut |  |
| 461 | 1.3.4.2.1.7 | MCC |  | 1d | 2019-12-09 | 2019-12-09 | 475 |  |  | 140.02d | 0d | start no earlier than 2019-07-01 | Proxa Short shut |  |
| 462 | 1.3.4.2.2 | **Manufacturing & Deliveries** |  | 37d | 2019-08-16 A | 2019-10-08 |  | 96% | 1.52d | 184.02d |  |  | Proxa Short shut |  |
| 463 | 1.3.4.2.2.1 | Manifolds for barge - MV |  | 36d | 2019-08-16 A | 2019-10-07 |  | 97% | 1d | 180.02d | 33d | start no earlier than 2019-08-16 | Proxa Short shut |  |
| 464 | 1.3.4.2.2.2 | manifold on land - MV |  | 37d | 2019-08-16 A | 2019-10-08 |  | 95% | 2d | 184.02d |  | start no earlier than 2019-08-16 | Proxa Short shut |  |
| 465 | 1.3.4.2.3 | **Equipment Installation** |  | 25d | 2019-11-12 | 2019-12-16 |  |  |  | 0.02d |  |  | Proxa Short shut |  |
| 466 | 1.3.4.2.3.1 | Cranes & riggers on site |  | 5d | 2019-11-12 | 2019-11-18 | 446 |  |  | 0.02d | 0d |  | Proxa Short shut |  |
| 467 | 1.3.4.2.3.2 | Barge system for pumps assembly |  | 5d | 2019-11-19 | 2019-11-25 | 466 |  |  | 135.02d | 0d |  | Proxa Short shut |  |
| 468 | 1.3.4.2.3.3 | Barge system for walkway assembly |  | 5d | 2019-11-26 | 2019-12-02 | 467 |  |  | 135.02d | 0d |  | Proxa Short shut |  |
| 469 | 1.3.4.2.3.4 | Anchoring placement |  | 5d | 2019-12-03 | 2019-12-09 | 468 |  |  | 135.02d | 0d |  | Proxa Short shut |  |
| 470 | 1.3.4.2.3.5 | Suction lines installation |  | 5d | 2019-12-10 | 2019-12-16 | 468, 469 |  |  | 135.02d |  |  | Proxa Short shut |  |
| 471 | 1.3.4.2.3.6 | Pipe header/manifold |  | 5d | 2019-11-22 | 2019-11-28 | 463, 449 |  |  | 147.02d |  |  | Proxa Short shut |  |
| 472 | 1.3.4.2.3.7 | HDPE lines on land |  | 10d | 2019-11-25 | 2019-12-06 | 466FS+4d |  |  | 0.02d | 0d |  | Proxa Short shut |  |
| 473 | 1.3.4.2.3.8 | Tank & bund |  | 5d | 2019-12-02 | 2019-12-06 | 472FS-5d |  |  | 0.02d | 0d |  | Proxa Short shut |  |
| 474 | 1.3.4.2.3.9 | Dosing unit |  | 5d | 2019-12-09 | 2019-12-13 | 473 |  |  | 136.02d |  |  | Proxa Short shut |  |
| 475 | 1.3.4.2.3.10 | MCC |  | 5d | 2019-12-02 | 2019-12-06 | 473SS |  |  | 0.02d | 0d |  | Proxa Short shut |  |
| 476 | 1.3.4.2.3.11 | Macdam mechanical complete | milestone | 0d | 2019-12-09 | 2019-12-09 | 461, 475 |  |  | 140.02d | 82d |  | Proxa Short shut |  |

| ID | WBS | Task | Type | Duration | Start | Finish | Predecessors | Total slack | Free slack | Calendar |
| --- | --- | --- | --- | --- | --- | --- | --- | --- | --- | --- |
| 477 | 1.3.4.3 | **Electrical Installation - Dev** |  | 7d | 2019-12-09 | 2019-12-17 |  | 0.02d |  | Proxa Short shut |
| 478 | 1.3.4.3.1 | MCC Installation |  | 1d | 2019-12-09 | 2019-12-09 | 475 | 0.02d | 0d | Proxa Short shut |
| 479 | 1.3.4.3.2 | Fitting of Cable Trays |  | 1d | 2019-12-10 | 2019-12-10 | 478 | 0.02d | 0d | Proxa Short shut |
| 480 | 1.3.4.3.3 | Power Cable Installation |  | 1d | 2019-12-11 | 2019-12-11 | 479 | 0.02d | 0d | Proxa Short shut |
| 481 | 1.3.4.3.4 | Re-Install Communication Dish and Ethernet Cables |  | 2d | 2019-12-12 | 2019-12-13 | 480 | 134.02d | 0d | Proxa Short shut |
| 482 | 1.3.4.3.5 | MCC Commissioning & Communication to NVB |  | 2d | 2019-12-16 | 2019-12-17 | 481 | 134.02d | 0d | Proxa Short shut |
| 483 | 1.3.4.3.6 | Macdam electrical complete | milestone | 0d | 2019-12-17 | 2019-12-17 | 482 | 134.02d | 59.69d | Proxa Short shut |
| 484 | 1.4 | **Commissioning** |  | 155d | 2019-12-10 | 2020-07-14 |  | 0d |  |  |
| 485 | 1.4.1 | **Site Commissioning Devcotech** |  | 43.03d | 2019-12-10 | 2020-02-07 |  | 0d |  |  |
| 486 | 1.4.1.1 | Commissioning of Phase 2 |  | 3d | 2019-12-10 | 2019-12-13 | 191 | 0d |  | Proxa Operations |
| 487 | 1.4.1.2 | Commissioning of Phase 3 |  | 3d | 2019-12-17 | 2019-12-20 | 192 | 147d |  | Proxa Operations |
| 488 | 1.4.1.3 | Commissioning of Phase 4 |  | 12d | 2020-01-22 | 2020-02-07 | 314 | 111.97d |  | Proxa Operations |
| 489 | 1.4.1.4 | Commissioning of Mac Dam |  | 3d | 2019-12-12 | 2019-12-16 | 480 | 0.02d |  | Proxa Operations |
| 490 | 1.4.2 | Pre-installation Checks - Phase 2 |  | 2d | 2019-12-13 | 2019-12-17 | 486 | 0d |  | Proxa Operations |
| 491 | 1.4.3 | Cold Commissioning - Phase 2 |  | 5d | 2019-12-17 | 2019-12-24 | 490, 489 | 0d |  | Proxa Operations |
| 492 | 1.4.4 | Hot Commissioning - Phase 2 |  | 5d | 2019-12-24 | 2019-12-31 | 491 | 0d |  | Proxa Operations |
| 493 | 1.4.5 | Phase 2 - Macdam & 50% UF/RO |  | 1mo | 2019-12-31 | 2020-01-28 | 492 | 0d |  | Proxa Operations |
| 494 | 1.4.6 | Phase 3 - 100% UF/RO |  | 1mo | 2020-01-28 | 2020-02-25 | 493 | 0d |  | Proxa Operations |
| 495 | 1.4.7 | Phase 4 - non therm & existing & thermal |  | 1mo | 2020-02-25 | 2020-03-24 | 494, 297, 317 | 0d |  | Proxa Operations |
| 496 | 1.4.8 | Phase 5 - ramp up thermal |  | 1mo | 2020-03-24 | 2020-04-21 | 495 | 0d |  | Proxa Operations |
| 497 | 1.4.9 | Phase 6 - ramp up thermal |  | 3mo | 2020-04-21 | 2020-07-14 | 496 | 0d |  | Proxa Operations |
